# FlexiTime

How a schedule from GanttProject changed from version to version. A marks actual dates.

## Version 1 (saved 2004-11-04)

Note of the change: Ajout du fichier GanttProject à la version du 04/11/2004

| ID | WBS | Task | Duration | Start | Finish | Predecessors | Complete |
| --- | --- | --- | --- | --- | --- | --- | --- |
| 1 |  | Définition du nom d'équipe | 0d | 2004-09-13 | 2004-09-13 |  | 100% |
| 2 |  | Attribution des rôles | 0d | 2004-09-14 | 2004-09-14 |  | 100% |
| 3 | 3 | **Gestion du planning** | 161d | 2004-09-14 | 2005-04-26 | 2 | 30% |
| 4 |  | Répartition des tâches CDC | 3d | 2004-09-14 | 2004-09-16 |  | 100% |
| 5 |  | Choix de l'outil de gestion de projet | 8d | 2004-09-17 | 2004-09-28 |  | 100% |
| 6 |  | Définition de l'état d'avancement | 4d | 2004-09-26 | 2004-09-30 |  | 100% |
| 7 |  | Répartition des tâches futures | 149d | 2004-09-26 | 2005-04-21 |  | 27% |
| 8 |  | Suivi de l'avancement | 149d | 2004-09-26 | 2005-04-21 |  | 27% |
| 9 | 4 | **Cahier Des Charges** | 17d | 2004-09-17 | 2004-10-11 |  | 100% |
| 10 |  | Répartition des tâches | 0d | 2004-09-17 | 2004-09-17 | 4 | 100% |
| 11 |  | Présentation de l'équipe | 1d | 2004-09-17 | 2004-09-17 | 10 | 100% |
| 12 |  | Définition de la charte graphique | 5d | 2004-09-17 | 2004-09-23 | 10 | 100% |
| 13 | 4.4 | **Consultation du client** | 2d | 2004-09-20 | 2004-09-21 |  | 100% |
| 14 |  | Réunion | 0d | 2004-09-20 | 2004-09-20 |  | 100% |
| 15 |  | Bilan des contraintes émises par le client | 1d | 2004-09-21 | 2004-09-21 | 14 | 100% |
| 16 |  | Glossaire des termes importants | 8d | 2004-09-22 | 2004-10-01 | 10, 13 | 100% |
| 17 |  | Liste des acteurs du système | 3d | 2004-09-22 | 2004-09-24 | 10, 13 | 100% |
| 18 |  | Diagramme d'interaction | 5d | 2004-09-25 | 2004-10-01 | 17 | 100% |
| 19 |  | Listes des fonctionnalités | 8d | 2004-09-22 | 2004-10-01 | 10, 13 | 100% |
| 20 |  | Réalisation du Logo | 6d | 2004-09-22 | 2004-09-29 |  | 100% |
| 21 |  | Première visualisation des documents CDC | 0d | 2004-09-23 | 2004-09-23 |  | 100% |
| 22 |  | Relecture et mise en conformité avec la chartre | 2d | 2004-09-28 | 2004-09-29 |  | 100% |
| 23 |  | Rendu Pré-Cahier des Charges | 0d | 2004-09-30 | 2004-09-30 |  | 100% |
| 24 |  | Signature du Cahier des Charges | 0d | 2004-10-04 | 2004-10-04 |  | 100% |
| 25 | 5 | **Mise en place de la communication** | 45d | 2004-09-22 | 2004-11-23 |  | 100% |
| 26 |  | Ouverture du compte Hébergeur | 1d | 2004-09-22 | 2004-09-22 |  | 100% |
| 27 |  | Création de la mailing list | 1d | 2004-09-23 | 2004-09-23 | 26 | 100% |
| 28 |  | Création du forum | 4d | 2004-09-23 | 2004-09-28 | 26 | 100% |
| 29 |  | Création compte SVN | 1d | 2004-09-25 | 2004-09-27 |  | 100% |
| 30 |  | Description des outils de gestions | 15d | 2004-10-22 | 2004-11-11 |  | 100% |
| 31 | 6 | **Cahier des Charges Fonctionnelles** | 32d | 2004-10-05 | 2004-11-17 |  | 100% |
| 32 |  | Formation à la réalisation des UC | 1d | 2004-10-05 | 2004-10-05 |  | 100% |
| 33 |  | Répartition des UC à réaliser | 0d | 2004-10-06 | 2004-10-06 |  | 100% |
| 34 | 6.3 | **Réalisation des diagrammes UC** | 11d | 2004-10-07 | 2004-10-21 | 33 | 100% |
| 35 |  | UC Visu infos des enseignants & stats | 11d | 2004-10-07 | 2004-10-21 |  | 100% |
| 36 |  | UC Gestion du groupe | 11d | 2004-10-07 | 2004-10-21 |  | 100% |
| 37 |  | UC Gestion Salles&Matériels | 11d | 2004-10-07 | 2004-10-21 |  | 100% |
| 38 |  | UC Séances & Indispo Enseignants | 11d | 2004-10-07 | 2004-10-21 |  | 100% |
| 39 |  | UC Visu d'un EDT & Export | 11d | 2004-10-07 | 2004-10-21 |  | 100% |
| 40 |  | UC Gestion de l'appli | 11d | 2004-10-07 | 2004-10-21 |  | 100% |
| 41 |  | Mise au point avec consultant UML | 0d | 2004-10-18 | 2004-10-18 |  | 100% |
| 42 |  | Structuration en paquetages | 9d | 2004-10-19 | 2004-10-29 | 41 | 100% |
| 43 |  | Réalisation de la documentation des UC | 9d | 2004-10-19 | 2004-10-29 |  | 100% |
| 44 |  | Réalisation des FQM par UC | 9d | 2004-10-28 | 2004-11-09 | 43 | 100% |
| 45 |  | Diagramme des paquetages | 6d | 2004-10-28 | 2004-11-04 |  | 100% |
| 46 | 7 | **Spécification de l'IG** | 9d | 2004-11-09 | 2004-11-19 |  |  |
| 47 |  | Zoning de l'interface | 3d | 2004-11-09 | 2004-11-11 |  |  |
| 48 |  | Définition des Boites de dialogue mineures | 6d | 2004-11-12 | 2004-11-19 | 47 |  |
| 49 |  | Description de la fenêtre principale | 6d | 2004-11-12 | 2004-11-19 | 47 |  |
| 50 |  | Définition des boîtes de dialogues complexes | 6d | 2004-11-12 | 2004-11-19 | 47 |  |
| 51 |  | Définition de la Charte Graphique | 8d | 2004-11-10 | 2004-11-19 |  |  |
| 52 | 8 | **Cahier des charges techniques** | 73d | 2004-10-19 | 2005-01-27 |  | 30% |
| 53 | 8.1 | **Pré-Rapport technique** | 18d | 2004-10-19 | 2004-11-11 |  | 100% |
| 54 |  | Elaboration des besoin | 2d | 2004-10-19 | 2004-10-20 |  | 100% |
| 55 |  | Correction des besoins | 2d | 2004-10-21 | 2004-10-22 | 54 | 100% |
| 56 |  | Recherche des technologies | 8d | 2004-10-23 | 2004-11-03 | 55 | 100% |
| 57 |  | Redaction de la documentation | 6d | 2004-10-31 | 2004-11-08 | 56 | 100% |
| 58 | 8.2 | **Etude technique** | 16d | 2004-11-09 | 2004-11-30 |  |  |
| 59 |  | Test des différentes SGBDR | 6d | 2004-11-09 | 2004-11-16 |  |  |
| 60 |  | Tests des bibliothèques Java-LDAP | 5d | 2004-11-15 | 2004-11-19 |  |  |
| 61 |  | Choix du serveur d'application | 5d | 2004-11-20 | 2004-11-26 |  |  |
| 62 |  | Manipulation des fichiers (XML, Exports, ...) | 6d | 2004-11-09 | 2004-11-16 |  |  |
| 63 |  | Test des bibliothèques Applications réparties | 6d | 2004-11-15 | 2004-11-22 |  |  |
| 64 |  | Test des bibliothèques d'envoi de mail | 3d | 2004-11-22 | 2004-11-24 |  |  |
| 65 |  | Description de l'architecture logicielle | 37d | 2004-11-23 | 2005-01-12 |  |  |
| 66 |  | Développement | 30d | 2005-01-04 | 2005-02-14 |  |  |
| 67 |  | Correction et mise en forme | 13d | 2005-02-08 | 2005-02-24 |  |  |

## Version 2 (saved 2004-11-04)

Note of the change: Ajout du Livrable Phase 2 Derniere modif du suivi d'avancement

Last finish stays 2005-04-26.

Added:

| ID | Task | Duration | Start | Finish | Predecessors | Resources |
| --- | --- | --- | --- | --- | --- | --- |
| 44 | Première relecture et mise en commun | 1d | 2004-10-28 | 2004-10-28 | 43 | Prâsad RAMASSAMY; Adrien BOUVET [50%]; Guillaume GUERRIN [50%]; Valère FOREL; Fabien APPERT; Jérôme GUERS [50%] |

Changed:

| ID | Task | Start | Finish | Duration | Complete | Predecessors | Other |
| --- | --- | --- | --- | --- | --- | --- | --- |
| 24 | Signature du Cahier des Charges |  |  |  |  |  | resources Adrien BOUVET; Valère FOREL; Fabien APPERT; Prâsad RAMASSAMY; Guillaume GUERRIN; Jérôme GUERS → Prâsad RAMASSAMY; Adrien BOUVET; Guillaume GUERRIN; Valère FOREL; Fabien APPERT; Jérôme GUERS |
| 30 | Description des outils de gestions |  |  |  |  |  | resources Adrien BOUVET; Jérôme GUERS [30%] → Adrien BOUVET [50%]; Jérôme GUERS [30%] |
| 31 | **Cahier des Charges Fonctionnelles** |  | 2004-11-17 → 2004-11-18 (+1d) | 32d → 33d | 100% → 99% |  |  |
| 33 | Répartition des UC à réaliser |  |  |  |  |  | resources Adrien BOUVET; Valère FOREL; Fabien APPERT; Prâsad RAMASSAMY; Guillaume GUERRIN; Jérôme GUERS [80%] → Prâsad RAMASSAMY; Adrien BOUVET; Guillaume GUERRIN; Valère FOREL; Fabien APPERT; Jérôme GUERS [80%] |
| 41 | Mise au point avec consultant UML |  |  |  |  |  | resources Adrien BOUVET; Valère FOREL; Prâsad RAMASSAMY; Fabien APPERT; Guillaume GUERRIN; Jérôme GUERS [80%] → Prâsad RAMASSAMY; Adrien BOUVET; Guillaume GUERRIN; Valère FOREL; Fabien APPERT; Jérôme GUERS [80%] |
| 43 | Réalisation de la documentation des UC |  |  |  |  |  | resources Valère FOREL; Prâsad RAMASSAMY → Prâsad RAMASSAMY; Valère FOREL |
| 45 | Réalisation des FQM par UC | 2004-10-28 → 2004-10-29 (+1d) | 2004-11-09 → 2004-11-10 (+1d) |  |  | 43 → 44 | resources Valère FOREL; Prâsad RAMASSAMY; Fabien APPERT [50%] → Prâsad RAMASSAMY; Valère FOREL; Fabien APPERT [50%] |
| 46 | Diagramme des paquetages | 2004-10-28 → 2004-10-29 (+1d) | 2004-11-04 → 2004-11-05 (+1d) |  |  |  |  |
| 54 | **Pré-Rapport technique** |  |  |  |  |  | resources Guillaume GUERRIN → none |
| 55 | Elaboration des besoin |  |  |  |  |  | resources none → Guillaume GUERRIN |
| 56 | Correction des besoins |  |  |  |  |  | resources none → Guillaume GUERRIN |
| 57 | Recherche des technologies |  |  |  |  |  | resources none → Guillaume GUERRIN [50%] |

## Version 3 (saved 2004-11-18)

Note of the change: Mise a jour du gantt phase 4

Last finish stays 2005-04-26. Complete tasks 41 → 52.

Added:

| ID | Task | Duration | Start | Finish | Predecessors | Resources |
| --- | --- | --- | --- | --- | --- | --- |
| 9 | Mise en place du tableau d'avancement | 4d | 2004-11-19 | 2004-11-24 |  | Jérôme GUERS [80%] |
| 52 | Définition des fenêtres de paramètres | 3d | 2004-11-16 | 2004-11-18 |  | Jérôme GUERS [80%] |
| 55 | Relecture & construction de la documentation finale | 4d | 2004-11-15 | 2004-11-18 |  | Adrien BOUVET |
| 56 | Définition du client léger | 4d | 2004-11-15 | 2004-11-18 |  | Guillaume GUERRIN [50%] |
| 57 | Définition des fenetres d'export | 4d | 2004-11-15 | 2004-11-18 |  | Valère FOREL |
| 65 | Apprentissage de LDAP | 6d | 2004-11-09 | 2004-11-16 |  | Valère FOREL |
| 68 | Choix de la bibliothèque d'IG | 8d | 2004-11-19 | 2004-11-30 |  | Prâsad RAMASSAMY |
| 69 | Définition de l'interface de défintion d'un EDT | 9d | 2004-11-27 | 2004-12-09 | 68 | Adrien BOUVET; Fabien APPERT |
| 70 | Test d'API d'Impression | 3d | 2004-11-19 | 2004-11-23 |  | Fabien APPERT |
| 71 | Test JUnit | 6d | 2004-11-19 | 2004-11-26 |  | Adrien BOUVET |
| 72 | Point bilan et d'avancement | 0d | 2004-11-26 | 2004-11-26 |  |  |
| 73 | Gestion du Drag&Drop | 5d | 2004-11-22 | 2004-11-26 |  | Fabien APPERT |
| 74 | Outils de compilation | 5d | 2004-11-24 | 2004-11-30 |  | Jérôme GUERS [80%] |
| 79 | Test d'hibernate | 6d | 2004-11-30 | 2004-12-07 |  | Prâsad RAMASSAMY [50%] |

Changed:

| ID | Task | Start | Finish | Duration | Complete | Other |
| --- | --- | --- | --- | --- | --- | --- |
| 3 | **Gestion du planning** |  |  |  | 30% → 39% |  |
| 7 | Répartition des tâches futures |  |  |  | 27% → 37% |  |
| 8 | Suivi de l'avancement |  |  |  | 27% → 37% |  |
| 21 | Réalisation du Logo |  |  |  |  | resources Valère FOREL [20%]; Fabien APPERT [50%] → Fabien APPERT [50%]; Valère FOREL [20%] |
| 25 | Signature du Cahier des Charges |  |  |  |  | resources Prâsad RAMASSAMY; Adrien BOUVET; Guillaume GUERRIN; Valère FOREL; Fabien APPERT; Jérôme GUERS → Adrien BOUVET; Fabien APPERT; Jérôme GUERS; Prâsad RAMASSAMY; Valère FOREL; Guillaume GUERRIN |
| 32 | **Cahier des Charges Fonctionnelles** |  |  |  | 99% → 100% |  |
| 34 | Répartition des UC à réaliser |  |  |  |  | resources Prâsad RAMASSAMY; Adrien BOUVET; Guillaume GUERRIN; Valère FOREL; Fabien APPERT; Jérôme GUERS [80%] → Adrien BOUVET; Fabien APPERT; Jérôme GUERS [80%]; Prâsad RAMASSAMY; Valère FOREL; Guillaume GUERRIN |
| 42 | Mise au point avec consultant UML |  |  |  |  | resources Prâsad RAMASSAMY; Adrien BOUVET; Guillaume GUERRIN; Valère FOREL; Fabien APPERT; Jérôme GUERS [80%] → Adrien BOUVET; Fabien APPERT; Jérôme GUERS [80%]; Prâsad RAMASSAMY; Valère FOREL; Guillaume GUERRIN |
| 45 | Première relecture et mise en commun |  |  |  | 0% → 100% | resources Prâsad RAMASSAMY; Adrien BOUVET [50%]; Guillaume GUERRIN [50%]; Valère FOREL; Fabien APPERT; Jérôme GUERS [50%] → Adrien BOUVET [50%]; Fabien APPERT; Jérôme GUERS [50%]; Prâsad RAMASSAMY; Valère FOREL; Guillaume GUERRIN [50%] |
| 46 | Réalisation des FQM par UC |  |  |  |  | resources Prâsad RAMASSAMY; Valère FOREL; Fabien APPERT [50%] → Fabien APPERT [50%]; Prâsad RAMASSAMY; Valère FOREL |
| 48 | **Spécification de l'IG** |  | 2004-11-19 → 2004-11-22 (+3d) | 9d → 10d | 0% → 100% |  |
| 49 | Zoning de l'interface |  |  |  | 0% → 100% | resources Prâsad RAMASSAMY; Fabien APPERT; Jérôme GUERS [80%] → Fabien APPERT; Jérôme GUERS [80%]; Prâsad RAMASSAMY |
| 50 | Définition du mode Gestion |  | 2004-11-19 → 2004-11-22 (+3d) | 6d → 7d | 0% → 100% | was named Définition des Boites de dialogue mineures; resources Jérôme GUERS [80%] → Prâsad RAMASSAMY |
| 51 | Description de la fenêtre principale |  | 2004-11-19 → 2004-11-17 (-2d) | 6d → 4d | 0% → 100% | resources Prâsad RAMASSAMY → Jérôme GUERS [80%] |
| 53 | Définition du mode Exploitation |  | 2004-11-19 → 2004-11-22 (+3d) | 6d → 7d | 0% → 100% | was named Définition des boîtes de dialogues complexes |
| 54 | Définition de la Charte Graphique |  | 2004-11-19 → 2004-11-16 (-3d) | 8d → 5d | 0% → 100% |  |
| 64 | **Etude technique** |  | 2004-11-30 → 2004-12-15 (+15d) | 16d → 27d | 0% → 18% |  |
| 66 | Manipulation des fichiers (XML, Exports, ...) |  | 2004-11-16 → 2004-11-30 (+14d) | 6d → 16d | 0% → 59% | resources Guillaume GUERRIN → Guillaume GUERRIN [50%] |
| 67 | Test des différentes SGBDR | 2004-11-09 → 2004-11-19 (+10d) | 2004-11-16 → 2004-11-26 (+10d) |  |  |  |
| 75 | Choix du serveur d'application | 2004-11-20 → 2004-11-25 (+5d) | 2004-11-26 → 2004-11-30 (+4d) | 5d → 4d |  |  |
| 76 | Test des bibliothèques d'envoi de mail | 2004-11-22 → 2004-11-25 (+3d) | 2004-11-24 → 2004-11-30 (+6d) | 3d → 4d |  |  |
| 77 | Tests des bibliothèques Java-LDAP | 2004-11-15 → 2004-11-29 (+14d) | 2004-11-19 → 2004-12-07 (+18d) | 5d → 7d |  |  |
| 78 | Test des bibliothèques Applications réparties | 2004-11-15 → 2004-11-29 (+14d) | 2004-11-22 → 2004-12-07 (+15d) | 6d → 7d |  |  |

## Version 4 (saved 2004-11-22)

Note of the change: Mise a jour du planning Ajout des templates XSLT-HTML Suppression du tableau de suivi d'avancement

Last finish stays 2005-04-26.

Added:

| ID | Task | Duration | Start | Finish | Resources |
| --- | --- | --- | --- | --- | --- |
| 10 | Répartition du développement et des tests | 2d | 2004-12-27 | 2004-12-28 | Jérôme GUERS [40%] |
| 59 | Redéfinition de la charte graphique | 2d | 2004-11-24 | 2004-11-25 | Adrien BOUVET |
| 60 | Nouvelle relecture | 3d | 2004-11-26 | 2004-11-30 | Jérôme GUERS [80%] |
| 84 | Répartition du travail -> Architecture | 2d | 2004-11-29 | 2004-11-30 | Valère FOREL; Jérôme GUERS [30%] |
| 85 | Rédaction de l'architecture | 17d | 2004-12-06 | 2004-12-28 |  |
| 86 | Relecture finale | 3d | 2004-12-27 | 2004-12-29 | Valère FOREL; Fabien APPERT |

Changed:

| ID | Task | Start | Finish | Duration | Complete | Other |
| --- | --- | --- | --- | --- | --- | --- |
| 22 | Réalisation du Logo |  |  |  |  | resources Fabien APPERT [50%]; Valère FOREL [20%] → Valère FOREL [20%]; Fabien APPERT [50%] |
| 26 | Signature du Cahier des Charges |  |  |  |  | resources Adrien BOUVET; Fabien APPERT; Jérôme GUERS; Prâsad RAMASSAMY; Valère FOREL; Guillaume GUERRIN → Valère FOREL; Adrien BOUVET; Prâsad RAMASSAMY; Jérôme GUERS; Fabien APPERT; Guillaume GUERRIN |
| 35 | Répartition des UC à réaliser |  |  |  |  | resources Adrien BOUVET; Fabien APPERT; Jérôme GUERS [80%]; Prâsad RAMASSAMY; Valère FOREL; Guillaume GUERRIN → Valère FOREL; Adrien BOUVET; Prâsad RAMASSAMY; Jérôme GUERS [80%]; Fabien APPERT; Guillaume GUERRIN |
| 43 | Mise au point avec consultant UML |  |  |  |  | resources Adrien BOUVET; Fabien APPERT; Jérôme GUERS [80%]; Prâsad RAMASSAMY; Valère FOREL; Guillaume GUERRIN → Valère FOREL; Adrien BOUVET; Prâsad RAMASSAMY; Jérôme GUERS [80%]; Fabien APPERT; Guillaume GUERRIN |
| 45 | Réalisation de la documentation des UC |  |  |  |  | resources Prâsad RAMASSAMY; Valère FOREL → Valère FOREL; Prâsad RAMASSAMY |
| 46 | Première relecture et mise en commun |  |  |  |  | resources Adrien BOUVET [50%]; Fabien APPERT; Jérôme GUERS [50%]; Prâsad RAMASSAMY; Valère FOREL; Guillaume GUERRIN [50%] → Valère FOREL; Adrien BOUVET [50%]; Prâsad RAMASSAMY; Jérôme GUERS [50%]; Fabien APPERT; Guillaume GUERRIN [50%] |
| 47 | Réalisation des FQM par UC |  |  |  |  | resources Fabien APPERT [50%]; Prâsad RAMASSAMY; Valère FOREL → Valère FOREL; Prâsad RAMASSAMY; Fabien APPERT [50%] |
| 49 | **Spécification de l'IG** |  | 2004-11-22 → 2004-12-06 (+14d) | 10d → 20d | 100% → 89% |  |
| 50 | Zoning de l'interface |  |  |  |  | resources Fabien APPERT; Jérôme GUERS [80%]; Prâsad RAMASSAMY → Prâsad RAMASSAMY; Jérôme GUERS [80%]; Fabien APPERT |
| 61 | **Cahier des charges techniques** |  |  |  | 30% → 29% |  |
| 67 | **Etude technique** |  |  |  | 18% → 19% |  |
| 74 | Test JUnit |  | 2004-11-26 → 2004-11-25 (-1d) | 6d → 5d |  |  |
| 77 | Outils de compilation | 2004-11-24 → 2004-11-29 (+5d) | 2004-11-30 → 2004-12-03 (+3d) |  |  | resources Jérôme GUERS [80%] → Jérôme GUERS [50%] |
| 80 | Tests des bibliothèques Java-LDAP | 2004-11-29 → 2004-12-01 (+2d) |  | 7d → 5d |  |  |
| 82 | Test d'hibernate | 2004-11-30 → 2004-11-27 (-3d) |  | 6d → 7d |  |  |
| 83 | **Description de l'architecture logicielle** | 2004-11-23 → 2004-11-29 (+6d) | 2005-01-12 → 2004-12-30 (-13d) | 37d → 24d |  |  |

## Version 5 (saved 2004-11-25)

Note of the change: Ajout de mon avancement sur APi graphique

Last finish stays 2005-04-26. Complete tasks 52 → 54.

Added:

| ID | Task | Duration | Start | Finish | Resources |
| --- | --- | --- | --- | --- | --- |
| 85 | Definition du MCD | 2d | 2004-12-06 | 2004-12-07 | Fabien APPERT |

Changed:

| ID | Task | Complete | Other |
| --- | --- | --- | --- |
| 3 | **Gestion du planning** | 39% → 40% |  |
| 9 | Mise en place du tableau d'avancement | 0% → 100% |  |
| 26 | Signature du Cahier des Charges |  | resources Valère FOREL; Adrien BOUVET; Prâsad RAMASSAMY; Jérôme GUERS; Fabien APPERT; Guillaume GUERRIN → Guillaume GUERRIN; Valère FOREL; Adrien BOUVET; Prâsad RAMASSAMY; Jérôme GUERS; Fabien APPERT |
| 35 | Répartition des UC à réaliser |  | resources Valère FOREL; Adrien BOUVET; Prâsad RAMASSAMY; Jérôme GUERS [80%]; Fabien APPERT; Guillaume GUERRIN → Guillaume GUERRIN; Valère FOREL; Adrien BOUVET; Prâsad RAMASSAMY; Jérôme GUERS [80%]; Fabien APPERT |
| 43 | Mise au point avec consultant UML |  | resources Valère FOREL; Adrien BOUVET; Prâsad RAMASSAMY; Jérôme GUERS [80%]; Fabien APPERT; Guillaume GUERRIN → Guillaume GUERRIN; Valère FOREL; Adrien BOUVET; Prâsad RAMASSAMY; Jérôme GUERS [80%]; Fabien APPERT |
| 46 | Première relecture et mise en commun |  | resources Valère FOREL; Adrien BOUVET [50%]; Prâsad RAMASSAMY; Jérôme GUERS [50%]; Fabien APPERT; Guillaume GUERRIN [50%] → Guillaume GUERRIN [50%]; Valère FOREL; Adrien BOUVET [50%]; Prâsad RAMASSAMY; Jérôme GUERS [50%]; Fabien APPERT |
| 61 | **Cahier des charges techniques** | 29% → 43% |  |
| 67 | **Etude technique** | 19% → 44% |  |
| 69 | Manipulation des fichiers (XML, Exports, ...) | 59% → 80% |  |
| 70 | Test des différentes SGBDR | 0% → 100% |  |
| 71 | Choix de la bibliothèque d'IG | 0% → 95% |  |
| 74 | Test JUnit | 0% → 95% |  |
| 80 | Tests des bibliothèques Java-LDAP | 0% → 20% |  |

## Version 6 (saved 2004-11-28)

Note of the change: MAJ de ma doc le 28/11 SGBD: OK Serveur d'appli: en recherche LDAP: presque fini

Last finish stays 2005-04-26.

Changed:

| ID | Task | Complete | Other |
| --- | --- | --- | --- |
| 4 | Répartition des tâches CDC |  | resources Jérôme GUERS → none |
| 5 | Choix de l'outil de gestion de projet |  | resources Jérôme GUERS → none |
| 6 | Définition de l'état d'avancement |  | resources Jérôme GUERS [30%] → none |
| 7 | Répartition des tâches futures |  | resources Jérôme GUERS [10%] → none |
| 8 | Suivi de l'avancement |  | resources Jérôme GUERS [10%] → none |
| 9 | Mise en place du tableau d'avancement |  | resources Jérôme GUERS [80%] → none |
| 10 | Répartition du développement et des tests |  | resources Jérôme GUERS [40%] → none |
| 13 | Présentation de l'équipe |  | resources Fabien APPERT → none |
| 14 | Définition de la charte graphique |  | resources Adrien BOUVET → none |
| 16 | Réunion |  | resources Fabien APPERT → none |
| 17 | Bilan des contraintes émises par le client |  | resources Fabien APPERT → none |
| 18 | Glossaire des termes importants |  | resources Guillaume GUERRIN → none |
| 19 | Liste des acteurs du système |  | resources Valère FOREL [80%] → none |
| 20 | Diagramme d'interaction |  | resources Valère FOREL [80%] → none |
| 21 | Listes des fonctionnalités |  | resources Prâsad RAMASSAMY → none |
| 22 | Réalisation du Logo |  | resources Valère FOREL [20%]; Fabien APPERT [50%] → none |
| 24 | Relecture et mise en conformité avec la chartre |  | resources Adrien BOUVET → none |
| 25 | Rendu Pré-Cahier des Charges |  | resources Jérôme GUERS → none |
| 26 | Signature du Cahier des Charges |  | resources Guillaume GUERRIN; Valère FOREL; Adrien BOUVET; Prâsad RAMASSAMY; Jérôme GUERS; Fabien APPERT → none |
| 28 | Ouverture du compte Hébergeur |  | resources Adrien BOUVET [10%] → none |
| 29 | Création de la mailing list |  | resources Adrien BOUVET [10%] → none |
| 30 | Création du forum |  | resources Adrien BOUVET [40%] → none |
| 31 | Création compte SVN |  | resources Jérôme GUERS [10%] → none |
| 32 | Description des outils de gestions |  | resources Adrien BOUVET [50%]; Jérôme GUERS [30%] → none |
| 34 | Formation à la réalisation des UC |  | resources Jérôme GUERS [80%] → none |
| 35 | Répartition des UC à réaliser |  | resources Guillaume GUERRIN; Valère FOREL; Adrien BOUVET; Prâsad RAMASSAMY; Jérôme GUERS [80%]; Fabien APPERT → none |
| 37 | UC Visu infos des enseignants & stats |  | resources Fabien APPERT → none |
| 38 | UC Gestion du groupe |  | resources Adrien BOUVET → none |
| 39 | UC Gestion Salles&Matériels |  | resources Guillaume GUERRIN → none |
| 40 | UC Séances & Indispo Enseignants |  | resources Jérôme GUERS [80%] → none |
| 41 | UC Visu d'un EDT & Export |  | resources Valère FOREL → none |
| 42 | UC Gestion de l'appli |  | resources Prâsad RAMASSAMY → none |
| 43 | Mise au point avec consultant UML |  | resources Guillaume GUERRIN; Valère FOREL; Adrien BOUVET; Prâsad RAMASSAMY; Jérôme GUERS [80%]; Fabien APPERT → none |
| 44 | Structuration en paquetages |  | resources Fabien APPERT → none |
| 45 | Réalisation de la documentation des UC |  | resources Valère FOREL; Prâsad RAMASSAMY → none |
| 46 | Première relecture et mise en commun |  | resources Guillaume GUERRIN [50%]; Valère FOREL; Adrien BOUVET [50%]; Prâsad RAMASSAMY; Jérôme GUERS [50%]; Fabien APPERT → none |
| 47 | Réalisation des FQM par UC |  | resources Valère FOREL; Prâsad RAMASSAMY; Fabien APPERT [50%] → none |
| 48 | Diagramme des paquetages |  | resources Fabien APPERT [50%] → none |
| 50 | Zoning de l'interface |  | resources Prâsad RAMASSAMY; Jérôme GUERS [80%]; Fabien APPERT → none |
| 51 | Définition du mode Gestion |  | resources Prâsad RAMASSAMY → none |
| 52 | Description de la fenêtre principale |  | resources Jérôme GUERS [80%] → none |
| 53 | Définition des fenêtres de paramètres |  | resources Jérôme GUERS [80%] → none |
| 54 | Définition du mode Exploitation |  | resources Fabien APPERT → none |
| 55 | Définition de la Charte Graphique |  | resources Adrien BOUVET → none |
| 56 | Relecture & construction de la documentation finale |  | resources Adrien BOUVET → none |
| 57 | Définition du client léger |  | resources Guillaume GUERRIN [50%] → none |
| 58 | Définition des fenetres d'export |  | resources Valère FOREL → none |
| 59 | Redéfinition de la charte graphique | 0% → 15% | resources Adrien BOUVET → none |
| 60 | Nouvelle relecture |  | resources Jérôme GUERS [80%] → none |
| 61 | **Cahier des charges techniques** | 43% → 46% |  |
| 63 | Elaboration des besoin |  | resources Guillaume GUERRIN → none |
| 64 | Correction des besoins |  | resources Guillaume GUERRIN → none |
| 65 | Recherche des technologies |  | resources Guillaume GUERRIN [50%] → none |
| 67 | **Etude technique** | 44% → 48% |  |
| 68 | Apprentissage de LDAP |  | resources Valère FOREL → none |
| 69 | Manipulation des fichiers (XML, Exports, ...) |  | resources Guillaume GUERRIN [50%] → none |
| 70 | Test des différentes SGBDR |  | resources Valère FOREL → none |
| 71 | Choix de la bibliothèque d'IG |  | resources Prâsad RAMASSAMY → none |
| 72 | Définition de l'interface de défintion d'un EDT |  | resources Adrien BOUVET; Fabien APPERT → none |
| 73 | Test d'API d'Impression |  | resources Fabien APPERT → none |
| 74 | Test JUnit |  | resources Adrien BOUVET → none |
| 75 | Gestion du Drag&Drop |  | resources Fabien APPERT → none |
| 76 | Outils de compilation |  | resources Jérôme GUERS [50%] → none |
| 78 | Choix du serveur d'application | 0% → 20% | resources Valère FOREL → none |
| 79 | Test des bibliothèques d'envoi de mail |  | resources Guillaume GUERRIN → none |
| 80 | Tests des bibliothèques Java-LDAP | 20% → 80% | resources Valère FOREL → none |
| 81 | Test des bibliothèques Applications réparties |  | resources Guillaume GUERRIN → none |
| 82 | Test d'hibernate |  | resources Prâsad RAMASSAMY [50%] → none |
| 84 | Répartition du travail -> Architecture |  | resources Valère FOREL; Jérôme GUERS [30%] → none |
| 85 | Definition du MCD |  | resources Fabien APPERT → none |

| ID | Task | Other |
| --- | --- | --- |
| 87 | Relecture finale | resources Valère FOREL; Fabien APPERT → none |

## Version 7 (saved 2004-11-29)

Note of the change: MAJ Gant

Last finish stays 2005-04-26. Complete tasks 54 → 55.

Changed:

| ID | Task | Complete | Other |
| --- | --- | --- | --- |
| 4 | Répartition des tâches CDC |  | resources none → Jérôme GUERS |
| 5 | Choix de l'outil de gestion de projet |  | resources none → Jérôme GUERS |
| 6 | Définition de l'état d'avancement |  | resources none → Jérôme GUERS [30%] |
| 7 | Répartition des tâches futures |  | resources none → Jérôme GUERS [10%] |
| 8 | Suivi de l'avancement |  | resources none → Jérôme GUERS [10%] |
| 9 | Mise en place du tableau d'avancement |  | resources none → Jérôme GUERS [80%] |
| 10 | Répartition du développement et des tests |  | resources none → Jérôme GUERS [40%] |
| 13 | Présentation de l'équipe |  | resources none → Fabien APPERT |
| 14 | Définition de la charte graphique |  | resources none → Adrien BOUVET |
| 16 | Réunion |  | resources none → Fabien APPERT |
| 17 | Bilan des contraintes émises par le client |  | resources none → Fabien APPERT |
| 18 | Glossaire des termes importants |  | resources none → Guillaume GUERRIN |
| 19 | Liste des acteurs du système |  | resources none → Valère FOREL [80%] |
| 20 | Diagramme d'interaction |  | resources none → Valère FOREL [80%] |
| 21 | Listes des fonctionnalités |  | resources none → Prâsad RAMASSAMY |
| 22 | Réalisation du Logo |  | resources none → Valère FOREL [20%]; Fabien APPERT [50%] |
| 24 | Relecture et mise en conformité avec la chartre |  | resources none → Adrien BOUVET |
| 25 | Rendu Pré-Cahier des Charges |  | resources none → Jérôme GUERS |
| 26 | Signature du Cahier des Charges |  | resources none → Valère FOREL; Prâsad RAMASSAMY; Guillaume GUERRIN; Jérôme GUERS; Fabien APPERT; Adrien BOUVET |
| 28 | Ouverture du compte Hébergeur |  | resources none → Adrien BOUVET [10%] |
| 29 | Création de la mailing list |  | resources none → Adrien BOUVET [10%] |
| 30 | Création du forum |  | resources none → Adrien BOUVET [40%] |
| 31 | Création compte SVN |  | resources none → Jérôme GUERS [10%] |
| 32 | Description des outils de gestions |  | resources none → Jérôme GUERS [30%]; Adrien BOUVET [50%] |
| 34 | Formation à la réalisation des UC |  | resources none → Jérôme GUERS [80%] |
| 35 | Répartition des UC à réaliser |  | resources none → Valère FOREL; Prâsad RAMASSAMY; Guillaume GUERRIN; Jérôme GUERS [80%]; Fabien APPERT; Adrien BOUVET |
| 37 | UC Visu infos des enseignants & stats |  | resources none → Fabien APPERT |
| 38 | UC Gestion du groupe |  | resources none → Adrien BOUVET |
| 39 | UC Gestion Salles&Matériels |  | resources none → Guillaume GUERRIN |
| 40 | UC Séances & Indispo Enseignants |  | resources none → Jérôme GUERS [80%] |
| 41 | UC Visu d'un EDT & Export |  | resources none → Valère FOREL |
| 42 | UC Gestion de l'appli |  | resources none → Prâsad RAMASSAMY |
| 43 | Mise au point avec consultant UML |  | resources none → Valère FOREL; Prâsad RAMASSAMY; Guillaume GUERRIN; Jérôme GUERS [80%]; Fabien APPERT; Adrien BOUVET |
| 44 | Structuration en paquetages |  | resources none → Fabien APPERT |
| 45 | Réalisation de la documentation des UC |  | resources none → Valère FOREL; Prâsad RAMASSAMY |
| 46 | Première relecture et mise en commun |  | resources none → Valère FOREL; Prâsad RAMASSAMY; Guillaume GUERRIN [50%]; Jérôme GUERS [50%]; Fabien APPERT; Adrien BOUVET [50%] |
| 47 | Réalisation des FQM par UC |  | resources none → Valère FOREL; Prâsad RAMASSAMY; Fabien APPERT [50%] |
| 48 | Diagramme des paquetages |  | resources none → Fabien APPERT [50%] |
| 50 | Zoning de l'interface |  | resources none → Prâsad RAMASSAMY; Jérôme GUERS [80%]; Fabien APPERT |
| 51 | Définition du mode Gestion |  | resources none → Prâsad RAMASSAMY |
| 52 | Description de la fenêtre principale |  | resources none → Jérôme GUERS [80%] |
| 53 | Définition des fenêtres de paramètres |  | resources none → Jérôme GUERS [80%] |
| 54 | Définition du mode Exploitation |  | resources none → Fabien APPERT |
| 55 | Définition de la Charte Graphique |  | resources none → Adrien BOUVET |
| 56 | Relecture & construction de la documentation finale |  | resources none → Adrien BOUVET |
| 57 | Définition du client léger |  | resources none → Guillaume GUERRIN [50%] |
| 58 | Définition des fenetres d'export |  | resources none → Valère FOREL |
| 59 | Redéfinition de la charte graphique |  | resources none → Adrien BOUVET |
| 60 | Nouvelle relecture |  | resources none → Jérôme GUERS [80%] |
| 61 | **Cahier des charges techniques** | 46% → 50% |  |
| 63 | Elaboration des besoin |  | resources none → Guillaume GUERRIN |
| 64 | Correction des besoins |  | resources none → Guillaume GUERRIN |
| 65 | Recherche des technologies |  | resources none → Guillaume GUERRIN [50%] |
| 67 | **Etude technique** | 48% → 56% |  |
| 68 | Apprentissage de LDAP |  | resources none → Valère FOREL |
| 69 | Manipulation des fichiers (XML, Exports, ...) |  | resources none → Guillaume GUERRIN [50%] |
| 70 | Test des différentes SGBDR |  | resources none → Valère FOREL |
| 71 | Choix de la bibliothèque d'IG |  | resources none → Prâsad RAMASSAMY |
| 72 | Définition de l'interface de défintion d'un EDT |  | resources none → Fabien APPERT; Adrien BOUVET |
| 73 | Test d'API d'Impression | 0% → 90% | resources none → Fabien APPERT |
| 74 | Test JUnit |  | resources none → Adrien BOUVET |
| 75 | Gestion du Drag&Drop | 0% → 75% | resources none → Fabien APPERT |
| 76 | Outils de compilation |  | resources none → Jérôme GUERS [50%] |
| 77 | Point bilan et d'avancement | 0% → 100% |  |
| 78 | Choix du serveur d'application | 20% → 30% | resources none → Valère FOREL |
| 79 | Test des bibliothèques d'envoi de mail |  | resources none → Guillaume GUERRIN |
| 80 | Tests des bibliothèques Java-LDAP |  | resources none → Valère FOREL |
| 81 | Test des bibliothèques Applications réparties |  | resources none → Guillaume GUERRIN |
| 82 | Test d'hibernate |  | resources none → Prâsad RAMASSAMY [50%] |
| 84 | Répartition du travail -> Architecture | 0% → 10% | resources none → Valère FOREL; Jérôme GUERS [30%] |

| ID | Task | Other |
| --- | --- | --- |
| 85 | Definition du MCD | resources none → Fabien APPERT |
| 87 | Relecture finale | resources none → Valère FOREL; Fabien APPERT |

## Version 8 (saved 2004-11-30)

Note of the change: suivi d'avancement flexiLDAPv2 ma doc technique v0.4

Last finish stays 2005-04-26. Complete tasks 55 → 57.

Changed:

| ID | Task | Complete | Other |
| --- | --- | --- | --- |
| 26 | Signature du Cahier des Charges |  | resources Valère FOREL; Prâsad RAMASSAMY; Guillaume GUERRIN; Jérôme GUERS; Fabien APPERT; Adrien BOUVET → Adrien BOUVET; Valère FOREL; Guillaume GUERRIN; Jérôme GUERS; Prâsad RAMASSAMY; Fabien APPERT |
| 32 | Description des outils de gestions |  | resources Jérôme GUERS [30%]; Adrien BOUVET [50%] → Adrien BOUVET [50%]; Jérôme GUERS [30%] |
| 35 | Répartition des UC à réaliser |  | resources Valère FOREL; Prâsad RAMASSAMY; Guillaume GUERRIN; Jérôme GUERS [80%]; Fabien APPERT; Adrien BOUVET → Adrien BOUVET; Valère FOREL; Guillaume GUERRIN; Jérôme GUERS [80%]; Prâsad RAMASSAMY; Fabien APPERT |
| 43 | Mise au point avec consultant UML |  | resources Valère FOREL; Prâsad RAMASSAMY; Guillaume GUERRIN; Jérôme GUERS [80%]; Fabien APPERT; Adrien BOUVET → Adrien BOUVET; Valère FOREL; Guillaume GUERRIN; Jérôme GUERS [80%]; Prâsad RAMASSAMY; Fabien APPERT |
| 46 | Première relecture et mise en commun |  | resources Valère FOREL; Prâsad RAMASSAMY; Guillaume GUERRIN [50%]; Jérôme GUERS [50%]; Fabien APPERT; Adrien BOUVET [50%] → Adrien BOUVET [50%]; Valère FOREL; Guillaume GUERRIN [50%]; Jérôme GUERS [50%]; Prâsad RAMASSAMY; Fabien APPERT |
| 49 | **Spécification de l'IG** | 89% → 91% |  |
| 50 | Zoning de l'interface |  | resources Prâsad RAMASSAMY; Jérôme GUERS [80%]; Fabien APPERT → Jérôme GUERS [80%]; Prâsad RAMASSAMY; Fabien APPERT |
| 59 | Redéfinition de la charte graphique | 15% → 50% |  |
| 61 | **Cahier des charges techniques** | 50% → 52% |  |
| 67 | **Etude technique** | 56% → 58% |  |
| 71 | Choix de la bibliothèque d'IG | 95% → 100% |  |
| 72 | Définition de l'interface de défintion d'un EDT |  | resources Fabien APPERT; Adrien BOUVET → Adrien BOUVET; Fabien APPERT |
| 78 | Choix du serveur d'application | 30% → 40% |  |
| 80 | Tests des bibliothèques Java-LDAP | 80% → 100% |  |

## Version 9 (saved 2004-12-01)

Note of the change: AB - MaJ planning

Last finish stays 2005-04-26.

Changed:

| ID | Task | Complete | Other |
| --- | --- | --- | --- |
| 22 | Réalisation du Logo |  | resources Valère FOREL [20%]; Fabien APPERT [50%] → Fabien APPERT [50%]; Valère FOREL [20%] |
| 26 | Signature du Cahier des Charges |  | resources Adrien BOUVET; Valère FOREL; Guillaume GUERRIN; Jérôme GUERS; Prâsad RAMASSAMY; Fabien APPERT → Guillaume GUERRIN; Fabien APPERT; Jérôme GUERS; Valère FOREL; Adrien BOUVET; Prâsad RAMASSAMY |
| 32 | Description des outils de gestions |  | resources Adrien BOUVET [50%]; Jérôme GUERS [30%] → Jérôme GUERS [30%]; Adrien BOUVET [50%] |
| 35 | Répartition des UC à réaliser |  | resources Adrien BOUVET; Valère FOREL; Guillaume GUERRIN; Jérôme GUERS [80%]; Prâsad RAMASSAMY; Fabien APPERT → Guillaume GUERRIN; Fabien APPERT; Jérôme GUERS [80%]; Valère FOREL; Adrien BOUVET; Prâsad RAMASSAMY |
| 43 | Mise au point avec consultant UML |  | resources Adrien BOUVET; Valère FOREL; Guillaume GUERRIN; Jérôme GUERS [80%]; Prâsad RAMASSAMY; Fabien APPERT → Guillaume GUERRIN; Fabien APPERT; Jérôme GUERS [80%]; Valère FOREL; Adrien BOUVET; Prâsad RAMASSAMY |
| 46 | Première relecture et mise en commun |  | resources Adrien BOUVET [50%]; Valère FOREL; Guillaume GUERRIN [50%]; Jérôme GUERS [50%]; Prâsad RAMASSAMY; Fabien APPERT → Guillaume GUERRIN [50%]; Fabien APPERT; Jérôme GUERS [50%]; Valère FOREL; Adrien BOUVET [50%]; Prâsad RAMASSAMY |
| 47 | Réalisation des FQM par UC |  | resources Valère FOREL; Prâsad RAMASSAMY; Fabien APPERT [50%] → Fabien APPERT [50%]; Valère FOREL; Prâsad RAMASSAMY |
| 49 | **Spécification de l'IG** | 91% → 93% |  |
| 50 | Zoning de l'interface |  | resources Jérôme GUERS [80%]; Prâsad RAMASSAMY; Fabien APPERT → Fabien APPERT; Jérôme GUERS [80%]; Prâsad RAMASSAMY |
| 59 | Redéfinition de la charte graphique | 50% → 90% |  |
| 72 | Définition de l'interface de défintion d'un EDT |  | resources Adrien BOUVET; Fabien APPERT → Fabien APPERT; Adrien BOUVET |
| 84 | Répartition du travail -> Architecture |  | resources Valère FOREL; Jérôme GUERS [30%] → Jérôme GUERS [30%]; Valère FOREL |
| 87 | Relecture finale |  | resources Valère FOREL; Fabien APPERT → Fabien APPERT; Valère FOREL |

## Version 10 (saved 2004-12-02)

Note of the change: Petite mise à jour du planning (mon avancement de relecture)

Last finish stays 2005-04-26.

Changed:

| ID | Task | Complete | Other |
| --- | --- | --- | --- |
| 22 | Réalisation du Logo |  | resources Fabien APPERT [50%]; Valère FOREL [20%] → Valère FOREL [20%]; Fabien APPERT [50%] |
| 26 | Signature du Cahier des Charges |  | resources Guillaume GUERRIN; Fabien APPERT; Jérôme GUERS; Valère FOREL; Adrien BOUVET; Prâsad RAMASSAMY → Jérôme GUERS; Valère FOREL; Fabien APPERT; Adrien BOUVET; Prâsad RAMASSAMY; Guillaume GUERRIN |
| 35 | Répartition des UC à réaliser |  | resources Guillaume GUERRIN; Fabien APPERT; Jérôme GUERS [80%]; Valère FOREL; Adrien BOUVET; Prâsad RAMASSAMY → Jérôme GUERS [80%]; Valère FOREL; Fabien APPERT; Adrien BOUVET; Prâsad RAMASSAMY; Guillaume GUERRIN |
| 43 | Mise au point avec consultant UML |  | resources Guillaume GUERRIN; Fabien APPERT; Jérôme GUERS [80%]; Valère FOREL; Adrien BOUVET; Prâsad RAMASSAMY → Jérôme GUERS [80%]; Valère FOREL; Fabien APPERT; Adrien BOUVET; Prâsad RAMASSAMY; Guillaume GUERRIN |
| 46 | Première relecture et mise en commun |  | resources Guillaume GUERRIN [50%]; Fabien APPERT; Jérôme GUERS [50%]; Valère FOREL; Adrien BOUVET [50%]; Prâsad RAMASSAMY → Jérôme GUERS [50%]; Valère FOREL; Fabien APPERT; Adrien BOUVET [50%]; Prâsad RAMASSAMY; Guillaume GUERRIN [50%] |
| 47 | Réalisation des FQM par UC |  | resources Fabien APPERT [50%]; Valère FOREL; Prâsad RAMASSAMY → Valère FOREL; Fabien APPERT [50%]; Prâsad RAMASSAMY |
| 49 | **Spécification de l'IG** | 93% → 98% |  |
| 50 | Zoning de l'interface |  | resources Fabien APPERT; Jérôme GUERS [80%]; Prâsad RAMASSAMY → Jérôme GUERS [80%]; Fabien APPERT; Prâsad RAMASSAMY |
| 60 | Nouvelle relecture | 0% → 80% |  |
| 61 | **Cahier des charges techniques** | 52% → 54% |  |
| 67 | **Etude technique** | 58% → 62% |  |
| 79 | Test des bibliothèques d'envoi de mail | 0% → 85% |  |
| 83 | **Description de l'architecture logicielle** | 0% → 1% |  |
| 84 | Répartition du travail -> Architecture | 10% → 20% |  |
| 87 | Relecture finale |  | resources Fabien APPERT; Valère FOREL → Valère FOREL; Fabien APPERT |

## Version 11 (saved 2004-12-04)

Note of the change: maj suivi d'avancement (archi log + serveur d'applis)

Last finish stays 2005-04-26. Complete tasks 57 → 58.

Changed:

| ID | Task | Complete | Other |
| --- | --- | --- | --- |
| 26 | Signature du Cahier des Charges |  | resources Jérôme GUERS; Valère FOREL; Fabien APPERT; Adrien BOUVET; Prâsad RAMASSAMY; Guillaume GUERRIN → Valère FOREL; Guillaume GUERRIN; Fabien APPERT; Jérôme GUERS; Prâsad RAMASSAMY; Adrien BOUVET |
| 35 | Répartition des UC à réaliser |  | resources Jérôme GUERS [80%]; Valère FOREL; Fabien APPERT; Adrien BOUVET; Prâsad RAMASSAMY; Guillaume GUERRIN → Valère FOREL; Guillaume GUERRIN; Fabien APPERT; Jérôme GUERS [80%]; Prâsad RAMASSAMY; Adrien BOUVET |
| 43 | Mise au point avec consultant UML |  | resources Jérôme GUERS [80%]; Valère FOREL; Fabien APPERT; Adrien BOUVET; Prâsad RAMASSAMY; Guillaume GUERRIN → Valère FOREL; Guillaume GUERRIN; Fabien APPERT; Jérôme GUERS [80%]; Prâsad RAMASSAMY; Adrien BOUVET |
| 46 | Première relecture et mise en commun |  | resources Jérôme GUERS [50%]; Valère FOREL; Fabien APPERT; Adrien BOUVET [50%]; Prâsad RAMASSAMY; Guillaume GUERRIN [50%] → Valère FOREL; Guillaume GUERRIN [50%]; Fabien APPERT; Jérôme GUERS [50%]; Prâsad RAMASSAMY; Adrien BOUVET [50%] |
| 50 | Zoning de l'interface |  | resources Jérôme GUERS [80%]; Fabien APPERT; Prâsad RAMASSAMY → Fabien APPERT; Jérôme GUERS [80%]; Prâsad RAMASSAMY |
| 61 | **Cahier des charges techniques** | 54% → 56% |  |
| 67 | **Etude technique** | 62% → 63% |  |
| 78 | Choix du serveur d'application | 40% → 60% |  |
| 83 | **Description de l'architecture logicielle** | 1% → 9% |  |
| 84 | Répartition du travail -> Architecture | 20% → 100% | resources Jérôme GUERS [30%]; Valère FOREL → Valère FOREL; Jérôme GUERS [30%] |

## Version 12 (saved 2004-12-05)

Note of the change: maj suivi d'avancement (serveur d'applis)

Last finish stays 2005-04-26. Complete tasks 58 → 59.

Changed:

| ID | Task | Complete | Other |
| --- | --- | --- | --- |
| 26 | Signature du Cahier des Charges |  | resources Valère FOREL; Guillaume GUERRIN; Fabien APPERT; Jérôme GUERS; Prâsad RAMASSAMY; Adrien BOUVET → Valère FOREL; Fabien APPERT; Guillaume GUERRIN; Jérôme GUERS; Prâsad RAMASSAMY; Adrien BOUVET |
| 35 | Répartition des UC à réaliser |  | resources Valère FOREL; Guillaume GUERRIN; Fabien APPERT; Jérôme GUERS [80%]; Prâsad RAMASSAMY; Adrien BOUVET → Valère FOREL; Fabien APPERT; Guillaume GUERRIN; Jérôme GUERS [80%]; Prâsad RAMASSAMY; Adrien BOUVET |
| 43 | Mise au point avec consultant UML |  | resources Valère FOREL; Guillaume GUERRIN; Fabien APPERT; Jérôme GUERS [80%]; Prâsad RAMASSAMY; Adrien BOUVET → Valère FOREL; Fabien APPERT; Guillaume GUERRIN; Jérôme GUERS [80%]; Prâsad RAMASSAMY; Adrien BOUVET |
| 46 | Première relecture et mise en commun |  | resources Valère FOREL; Guillaume GUERRIN [50%]; Fabien APPERT; Jérôme GUERS [50%]; Prâsad RAMASSAMY; Adrien BOUVET [50%] → Valère FOREL; Fabien APPERT; Guillaume GUERRIN [50%]; Jérôme GUERS [50%]; Prâsad RAMASSAMY; Adrien BOUVET [50%] |
| 61 | **Cahier des charges techniques** | 56% → 57% |  |
| 67 | **Etude technique** | 63% → 65% |  |
| 78 | Choix du serveur d'application | 60% → 100% |  |

## Version 13 (saved 2004-12-08)

Note of the change: Mise a jour du planning Ajout du fichier de config HybernateSynchronizer et de package.html (exemple de JavaDoc de paquetage)

Last finish stays 2005-04-26. Complete tasks 59 → 60.

Added:

| ID | Task | Duration | Start | Finish | Resources |
| --- | --- | --- | --- | --- | --- |
| 86 | Définition paquetage : Data - Tools - Exceptions | 3d | 2004-12-06 | 2004-12-08 | Guillaume GUERRIN |
| 87 | Définition paquetage : COM, I/O | 3d | 2004-12-06 | 2004-12-08 | Adrien BOUVET [70%] |
| 88 | Définition paquetage : CORE | 3d | 2004-12-06 | 2004-12-08 | Valère FOREL [70%] |
| 89 | Définition paquetage : EVENT | 3d | 2004-12-06 | 2004-12-08 | Fabien APPERT |
| 90 | Définition du paquetage | 3d | 2004-12-06 | 2004-12-08 | Prâsad RAMASSAMY |

Changed:

| ID | Task | Start | Finish | Duration | Complete | Other |
| --- | --- | --- | --- | --- | --- | --- |
| 3 | **Gestion du planning** |  |  |  | 40% → 52% |  |
| 7 | Répartition des tâches futures |  |  |  | 37% → 50% |  |
| 8 | Suivi de l'avancement |  |  |  | 37% → 50% |  |
| 13 | Présentation de l'équipe | 2004-09-17 → 2004-09-18 (+1d) | 2004-09-17 → 2004-09-20 (+3d) |  |  |  |
| 14 | Définition de la charte graphique | 2004-09-17 → 2004-09-18 (+1d) | 2004-09-23 → 2004-09-24 (+1d) |  |  | resources Adrien BOUVET → Adrien BOUVET [50%] |
| 22 | Réalisation du Logo |  |  |  |  | resources Valère FOREL [20%]; Fabien APPERT [50%] → Fabien APPERT [50%]; Valère FOREL [20%] |
| 26 | Signature du Cahier des Charges |  |  |  |  | resources Valère FOREL; Fabien APPERT; Guillaume GUERRIN; Jérôme GUERS; Prâsad RAMASSAMY; Adrien BOUVET → Jérôme GUERS; Guillaume GUERRIN; Fabien APPERT; Prâsad RAMASSAMY; Adrien BOUVET; Valère FOREL |
| 35 | Répartition des UC à réaliser |  |  |  |  | resources Valère FOREL; Fabien APPERT; Guillaume GUERRIN; Jérôme GUERS [80%]; Prâsad RAMASSAMY; Adrien BOUVET → Jérôme GUERS [80%]; Guillaume GUERRIN; Fabien APPERT; Prâsad RAMASSAMY; Adrien BOUVET; Valère FOREL |
| 43 | Mise au point avec consultant UML |  |  |  |  | resources Valère FOREL; Fabien APPERT; Guillaume GUERRIN; Jérôme GUERS [80%]; Prâsad RAMASSAMY; Adrien BOUVET → Jérôme GUERS [80%]; Guillaume GUERRIN; Fabien APPERT; Prâsad RAMASSAMY; Adrien BOUVET; Valère FOREL |
| 45 | Réalisation de la documentation des UC |  |  |  |  | resources Valère FOREL; Prâsad RAMASSAMY → Prâsad RAMASSAMY; Valère FOREL |
| 46 | Première relecture et mise en commun |  |  |  |  | resources Valère FOREL; Fabien APPERT; Guillaume GUERRIN [50%]; Jérôme GUERS [50%]; Prâsad RAMASSAMY; Adrien BOUVET [50%] → Jérôme GUERS [50%]; Guillaume GUERRIN [50%]; Fabien APPERT; Prâsad RAMASSAMY; Adrien BOUVET [50%]; Valère FOREL |
| 47 | Réalisation des FQM par UC |  |  |  |  | resources Valère FOREL; Fabien APPERT [50%]; Prâsad RAMASSAMY → Fabien APPERT [50%]; Prâsad RAMASSAMY; Valère FOREL |
| 49 | **Spécification de l'IG** |  |  |  | 98% → 99% |  |
| 50 | Zoning de l'interface |  |  |  |  | resources Fabien APPERT; Jérôme GUERS [80%]; Prâsad RAMASSAMY → Jérôme GUERS [80%]; Fabien APPERT; Prâsad RAMASSAMY |
| 60 | Nouvelle relecture |  |  |  | 80% → 100% |  |
| 61 | **Cahier des charges techniques** |  |  |  | 57% → 61% |  |
| 67 | **Etude technique** |  | 2004-12-15 → 2004-12-20 (+5d) | 27d → 30d | 65% → 68% |  |
| 81 | Test des bibliothèques Applications réparties | 2004-11-29 → 2004-12-07 (+8d) | 2004-12-07 → 2004-12-08 (+1d) | 7d → 2d |  | resources Guillaume GUERRIN → Adrien BOUVET [30%]; Valère FOREL [30%] |
| 83 | **Description de l'architecture logicielle** |  | 2004-12-30 → 2004-12-20 (-10d) | 24d → 16d |  |  |
| 84 | Répartition du travail -> Architecture |  |  |  |  | resources Valère FOREL; Jérôme GUERS [30%] → Jérôme GUERS [30%]; Valère FOREL |
| 85 | **Rédaction de l'architecture** |  | 2004-12-28 → 2004-12-08 (-20d) | 17d → 3d |  |  |
| 91 | Definition du MCD | 2004-12-06 → 2004-12-13 (+7d) | 2004-12-07 → 2004-12-14 (+7d) |  |  |  |
| 92 | Relecture finale |  |  |  |  | resources Valère FOREL; Fabien APPERT → Adrien BOUVET; Valère FOREL |

## Version 14 (saved 2004-12-30)

Note of the change: Modifiaction partielle de Gantt phae 5

Last finish stays 2005-04-26. Complete tasks 60 → 74.

Added:

| ID | Task | Duration | Start | Finish | Resources |
| --- | --- | --- | --- | --- | --- |
| 83 | Test de communication | 2d | 2004-12-07 | 2004-12-08 | Valère FOREL; Adrien BOUVET |
| 91 | Paquetage Common | 5d | 2004-12-09 | 2004-12-15 | Guillaume GUERRIN |
| 92 | Paquetage Server | 5d | 2004-12-09 | 2004-12-15 | Valère FOREL |
| 93 | Paquetage Interface | 5d | 2004-12-09 | 2004-12-15 | Adrien BOUVET |
| 94 | Premiers diagrammes de séquence | 5d | 2004-12-09 | 2004-12-15 | Fabien APPERT |
| 95 | Réalisation des diagrammes de séquence | 7d | 2004-12-20 | 2004-12-28 | Valère FOREL; Fabien APPERT; Adrien BOUVET |
| 96 | Finalisation des paquetages | 7d | 2004-12-20 | 2004-12-28 | Guillaume GUERRIN |
| 97 | Suivi de l'avancement à distance | 6d | 2004-12-20 | 2004-12-27 | Jérôme GUERS [80%] |
| 100 | **flexitime.common** | 8d | 2005-01-04 | 2005-01-13 |  |
| 101 | **flexitime.common.data** | 3d | 2005-01-04 | 2005-01-06 |  |
| 102 | Dév flexitime.common.data | 3d | 2005-01-04 | 2005-01-06 | Adrien BOUVET |
| 103 | Test flexitime.common.data | 3d | 2005-01-04 | 2005-01-06 | Guillaume GUERRIN [50%] |
| 104 | **flexitime.common.tools** | 3d | 2005-01-04 | 2005-01-06 |  |
| 105 | Dev flexitime.common.tools | 3d | 2005-01-04 | 2005-01-06 | Valère FOREL |
| 106 | Test flexitime.common.tools | 3d | 2005-01-04 | 2005-01-06 | Guillaume GUERRIN [50%] |
| 107 | **flexitime.common.rmi** | 8d | 2005-01-04 | 2005-01-13 |  |
| 108 | Dev flexitime.common.rmi | 7d | 2005-01-04 | 2005-01-12 | Prâsad RAMASSAMY |
| 109 | Test flexitime.common.rmi | 5d | 2005-01-07 | 2005-01-13 | Valère FOREL |
| 110 | **flexitime.server** | 1d | 2005-01-04 | 2005-01-04 |  |
| 111 | flexitime.server.io | 1d | 2005-01-04 | 2005-01-04 |  |
| 112 | **flexitime.server.core** | 1d | 2005-01-04 | 2005-01-04 |  |
| 113 | flexitime.server.core.admin | 1d | 2005-01-04 | 2005-01-04 |  |
| 114 | flexitime.server.core.management | 1d | 2005-01-04 | 2005-01-04 |  |
| 115 | flexitime.richClient | 7d | 2005-01-22 | 2005-02-01 |  |
| 116 | **Validation de l'avancement et du fonctionnement** | 32d | 2005-01-04 | 2005-02-16 |  |
| 117 | Validation des tests et de l'avancement | 32d | 2005-01-04 | 2005-02-16 | Jérôme GUERS [80%] |
| 118 | **Rédaction des fiches de bugs** | 7d | 2005-01-29 | 2005-02-08 |  |
| 119 | Fonctions génériques | 7d | 2005-01-29 | 2005-02-08 | Adrien BOUVET |
| 120 | Mode Gestion | 7d | 2005-01-29 | 2005-02-08 | Guillaume GUERRIN |
| 121 | Mode Exploitation | 7d | 2005-01-29 | 2005-02-08 | Valère FOREL; Fabien APPERT |
| 122 | Mode Historique | 7d | 2005-01-29 | 2005-02-08 | Prâsad RAMASSAMY |

Removed: 90 Définition du paquetage; 91 Definition du MCD

Changed:

| ID | Task | Start | Finish | Duration | Complete | Other |
| --- | --- | --- | --- | --- | --- | --- |
| 3 | **Gestion du planning** |  |  |  | 52% → 67% |  |
| 7 | Répartition des tâches futures |  |  |  | 50% → 65% |  |
| 8 | Suivi de l'avancement |  |  |  | 50% → 65% |  |
| 10 | Répartition du développement et des tests |  | 2004-12-28 → 2004-12-30 (+2d) | 2d → 4d | 0% → 100% |  |
| 22 | Réalisation du Logo |  |  |  |  | resources Fabien APPERT [50%]; Valère FOREL [20%] → Valère FOREL [20%]; Fabien APPERT [50%] |
| 26 | Signature du Cahier des Charges |  |  |  |  | resources Jérôme GUERS; Guillaume GUERRIN; Fabien APPERT; Prâsad RAMASSAMY; Adrien BOUVET; Valère FOREL → Valère FOREL; Jérôme GUERS; Prâsad RAMASSAMY; Fabien APPERT; Guillaume GUERRIN; Adrien BOUVET |
| 35 | Répartition des UC à réaliser |  |  |  |  | resources Jérôme GUERS [80%]; Guillaume GUERRIN; Fabien APPERT; Prâsad RAMASSAMY; Adrien BOUVET; Valère FOREL → Valère FOREL; Jérôme GUERS [80%]; Prâsad RAMASSAMY; Fabien APPERT; Guillaume GUERRIN; Adrien BOUVET |
| 43 | Mise au point avec consultant UML |  |  |  |  | resources Jérôme GUERS [80%]; Guillaume GUERRIN; Fabien APPERT; Prâsad RAMASSAMY; Adrien BOUVET; Valère FOREL → Valère FOREL; Jérôme GUERS [80%]; Prâsad RAMASSAMY; Fabien APPERT; Guillaume GUERRIN; Adrien BOUVET |
| 45 | Réalisation de la documentation des UC |  |  |  |  | resources Prâsad RAMASSAMY; Valère FOREL → Valère FOREL; Prâsad RAMASSAMY |
| 46 | Première relecture et mise en commun |  |  |  |  | resources Jérôme GUERS [50%]; Guillaume GUERRIN [50%]; Fabien APPERT; Prâsad RAMASSAMY; Adrien BOUVET [50%]; Valère FOREL → Valère FOREL; Jérôme GUERS [50%]; Prâsad RAMASSAMY; Fabien APPERT; Guillaume GUERRIN [50%]; Adrien BOUVET [50%] |
| 47 | Réalisation des FQM par UC |  |  |  |  | resources Fabien APPERT [50%]; Prâsad RAMASSAMY; Valère FOREL → Valère FOREL; Prâsad RAMASSAMY; Fabien APPERT [50%] |
| 50 | Zoning de l'interface |  |  |  |  | resources Jérôme GUERS [80%]; Fabien APPERT; Prâsad RAMASSAMY → Jérôme GUERS [80%]; Prâsad RAMASSAMY; Fabien APPERT |
| 61 | **Cahier des charges techniques** |  | 2005-01-27 → 2005-01-28 (+1d) | 73d → 74d | 61% → 90% |  |
| 67 | **Etude technique** |  | 2004-12-20 → 2005-01-18 (+29d) | 30d → 51d | 68% → 98% |  |
| 69 | Manipulation des fichiers (XML, Exports, ...) |  |  |  | 80% → 100% |  |
| 72 | Définition de l'interface de défintion d'un EDT |  |  |  | 0% → 100% | resources Fabien APPERT; Adrien BOUVET → Fabien APPERT |
| 73 | Test d'API d'Impression |  |  |  | 90% → 100% |  |
| 74 | Test JUnit |  |  |  | 95% → 100% |  |
| 75 | Gestion du Drag&Drop |  |  |  | 75% → 100% |  |
| 76 | Outils de compilation |  |  |  | 0% → 100% |  |
| 79 | Test des bibliothèques d'envoi de mail |  |  |  | 85% → 100% |  |
| 81 | Test des bibliothèques Applications réparties | 2004-12-07 → 2004-12-11 (+4d) | 2004-12-08 → 2005-01-06 (+29d) | 2d → 19d | 0% → 100% | resources Adrien BOUVET [30%]; Valère FOREL [30%] → Prâsad RAMASSAMY [30%] |
| 82 | Test d'hibernate |  | 2004-12-07 → 2004-12-16 (+9d) | 7d → 14d | 30% → 100% |  |
| 84 | **Description de l'architecture logicielle** |  | 2004-12-20 → 2005-01-05 (+16d) | 16d → 28d | 9% → 71% |  |
| 85 | Répartition du travail -> Architecture |  |  |  |  | resources Jérôme GUERS [30%]; Valère FOREL → Valère FOREL; Jérôme GUERS [30%] |
| 86 | **Rédaction de l'architecture** |  | 2004-12-08 → 2005-01-03 (+26d) | 3d → 21d | 0% → 71% |  |
| 88 | Définition paquetage : COM, I/O |  |  |  | 0% → 48% |  |
| 98 | Relecture finale |  | 2004-12-29 → 2004-12-30 (+1d) | 3d → 4d | 0% → 100% | resources Adrien BOUVET; Valère FOREL → Jérôme GUERS [80%] |
| 99 | **Développement** |  | 2005-02-14 → 2005-02-16 (+2d) | 30d → 32d |  |  |

## Version 15 (saved 2004-12-31)

Note of the change: MaJ Gantt pour la phase 5

Last finish stays 2005-04-26. Complete tasks 74 → 75.

Added:

| ID | Task | Duration | Start | Finish | Resources |
| --- | --- | --- | --- | --- | --- |
| 110 | **flexitime.common.event** | 7d | 2005-01-04 | 2005-01-12 |  |
| 111 | Dev flexitime.common.event | 7d | 2005-01-04 | 2005-01-12 | Prâsad RAMASSAMY [20%] |
| 112 | Test flexitime.common.event | 2d | 2005-01-04 | 2005-01-05 | Prâsad RAMASSAMY [20%] |
| 115 | Dev flexitime.server.core | 4d | 2005-01-11 | 2005-01-14 | Valère FOREL |
| 116 | Test flexitime.server.core | 4d | 2005-01-11 | 2005-01-14 | Adrien BOUVET |
| 118 | Dev flexitime.server.core.management | 2d | 2005-01-15 | 2005-01-18 | Valère FOREL |
| 119 | Test flexitime.server.core.management | 2d | 2005-01-15 | 2005-01-18 | Adrien BOUVET |
| 121 | Dev flexitime.server.core.admin | 3d | 2005-01-07 | 2005-01-11 | Guillaume GUERRIN [50%] |
| 122 | Test flexitime.server.core.admin | 3d | 2005-01-07 | 2005-01-11 | Guillaume GUERRIN [50%] |
| 124 | **flexitime.server.io.FlexiLDAP** | 3d | 2005-01-10 | 2005-01-12 |  |
| 125 | Test flexitime.server.io.FlexiLDAP | 3d | 2005-01-10 | 2005-01-12 | Guillaume GUERRIN [50%] |
| 126 | **flexitime.server.io.FlexiFOP** | 5d | 2005-01-24 | 2005-01-28 |  |
| 127 | Dev flexitime.server.io.FlexiFOP | 2d | 2005-01-24 | 2005-01-25 | Guillaume GUERRIN |
| 128 | XSLT flexitime.server.io.FlexiFOP | 3d | 2005-01-26 | 2005-01-28 | Jérôme GUERS [30%] |
| 129 | Test flexitime.server.io.FlexiFOP | 2d | 2005-01-24 | 2005-01-25 | Valère FOREL [50%] |
| 130 | **flexitime.server.io.FleXML** | 6d | 2005-01-04 | 2005-01-11 |  |
| 131 | Dev flexitime.server.io.FleXML | 3d | 2005-01-04 | 2005-01-06 | Jérôme GUERS [80%] |
| 132 | Test flexitime.server.io.FleXML | 3d | 2005-01-07 | 2005-01-11 | Adrien BOUVET [50%] |
| 133 | **flexitime.server.io.FlexiPrint** | 3d | 2005-01-07 | 2005-01-11 |  |
| 134 | Test flexitime.server.io.FlexiPrint | 3d | 2005-01-07 | 2005-01-11 | Jérôme GUERS [40%] |
| 135 | **flexitime.server.io.FlexiMail** | 3d | 2005-01-07 | 2005-01-11 |  |
| 136 | Test flexitime.server.io.FlexiMail | 3d | 2005-01-07 | 2005-01-11 | Jérôme GUERS [40%] |
| 137 | **flexitime.server.io.storage** | 6d | 2005-01-11 | 2005-01-18 |  |
| 138 | Dev flexitime.server.io.storage | 6d | 2005-01-11 | 2005-01-18 | Prâsad RAMASSAMY |
| 139 | Test flexitime.server.io.storage | 6d | 2005-01-11 | 2005-01-18 | Fabien APPERT |
| 141 | **flexitime.richClient.models** | 5d | 2005-01-17 | 2005-01-21 |  |
| 142 | Dev flexitime.richClient.models | 5d | 2005-01-17 | 2005-01-21 | Fabien APPERT |
| 143 | Test flexitime.richClient.models | 5d | 2005-01-17 | 2005-01-21 | Prâsad RAMASSAMY |
| 144 | **flexitime.richClient.gui** | 23d | 2005-01-04 | 2005-02-03 |  |
| 145 | flexitime.richClient.gui.actions | 4d | 2005-01-13 | 2005-01-18 | Guillaume GUERRIN |
| 146 | **flexitime.richClient.gui.panel** | 18d | 2005-01-04 | 2005-01-27 |  |
| 147 | flexitime.richClient.gui.panel.management | 5d | 2005-01-17 | 2005-01-21 | Guillaume GUERRIN |
| 148 | flexitime.richClient.gui.panel.exploitation | 7d | 2005-01-04 | 2005-01-12 | Fabien APPERT |
| 149 | flexitime.richClient.gui.views | 5d | 2005-01-22 | 2005-01-28 | Adrien BOUVET |
| 150 | flexitime.ligthClient | 5d | 2005-01-17 | 2005-01-21 | Valère FOREL |

Changed:

| ID | Task | Start | Finish | Duration | Complete | Other |
| --- | --- | --- | --- | --- | --- | --- |
| 61 | **Cahier des charges techniques** |  |  |  | 90% → 85% |  |
| 67 | **Etude technique** |  |  |  | 98% → 100% |  |
| 78 | Test des bibliothèques d'envoi de mail |  | 2004-11-30 → 2004-12-03 (+3d) | 4d → 7d |  |  |
| 79 | Tests des bibliothèques Java-LDAP |  | 2004-12-07 → 2004-12-03 (-4d) | 5d → 3d |  |  |
| 82 | Test de communication |  |  |  | 25% → 100% |  |
| 83 | Définition de l'interface de défintion d'un EDT |  | 2004-12-09 → 2004-12-03 (-6d) | 9d → 5d |  |  |
| 84 | **Description de l'architecture logicielle** |  |  |  | 71% → 61% |  |
| 86 | **Rédaction de l'architecture** | 2004-12-06 → 2004-12-02 (-4d) | 2005-01-03 → 2005-01-05 (+2d) | 21d → 25d | 71% → 60% |  |
| 87 | Définition paquetage : Data - Tools - Exceptions | 2004-12-06 → 2004-12-02 (-4d) | 2004-12-08 → 2004-12-10 (+2d) | 3d → 7d |  |  |
| 88 | Définition paquetage : COM, I/O | 2004-12-06 → 2004-12-02 (-4d) | 2004-12-08 → 2004-12-10 (+2d) | 3d → 7d |  |  |
| 89 | Définition paquetage : CORE | 2004-12-06 → 2004-12-02 (-4d) | 2004-12-08 → 2004-12-10 (+2d) | 3d → 7d |  |  |
| 90 | Définition paquetage : EVENT | 2004-12-06 → 2004-12-02 (-4d) | 2004-12-08 → 2004-12-10 (+2d) | 3d → 7d |  |  |
| 95 | Réalisation des diagrammes de séquence | 2004-12-20 → 2004-12-14 (-6d) | 2004-12-28 → 2004-12-30 (+2d) | 7d → 13d |  |  |
| 96 | Finalisation des paquetages | 2004-12-20 → 2004-12-14 (-6d) | 2004-12-28 → 2004-12-30 (+2d) | 7d → 13d |  |  |
| 97 | Suivi de l'avancement à distance | 2004-12-20 → 2004-12-14 (-6d) | 2004-12-27 → 2004-12-29 (+2d) | 6d → 12d |  |  |
| 99 | **Développement** |  | 2005-02-16 → 2005-02-14 (-2d) | 32d → 30d |  |  |
| 100 | **flexitime.common** |  | 2005-01-13 → 2005-01-12 (-1d) | 8d → 7d |  |  |
| 107 | **flexitime.common.rmi** |  | 2005-01-13 → 2005-01-12 (-1d) | 8d → 7d |  |  |
| 108 | Dev flexitime.common.rmi |  |  |  |  | resources Prâsad RAMASSAMY → Prâsad RAMASSAMY [30%] |
| 109 | Test flexitime.common.rmi |  | 2005-01-13 → 2005-01-12 (-1d) | 5d → 4d |  |  |
| 113 | **flexitime.server** |  | 2005-01-04 → 2005-02-07 (+34d) | 1d → 25d |  |  |
| 114 | **flexitime.server.core** | 2005-01-04 → 2005-01-07 (+3d) | 2005-01-04 → 2005-01-20 (+16d) | 1d → 10d |  |  |
| 117 | **flexitime.server.core.management** | 2005-01-04 → 2005-01-15 (+11d) | 2005-01-04 → 2005-01-18 (+14d) | 1d → 2d |  |  |
| 120 | **flexitime.server.core.admin** | 2005-01-04 → 2005-01-07 (+3d) | 2005-01-04 → 2005-01-11 (+7d) | 1d → 3d |  |  |
| 123 | **flexitime.server.io** |  | 2005-01-04 → 2005-02-07 (+34d) | 1d → 25d |  |  |
| 140 | **flexitime.richClient** | 2005-01-22 → 2005-01-04 (-18d) | 2005-02-01 → 2005-02-03 (+2d) | 7d → 23d |  |  |
| 151 | **Validation de l'avancement et du fonctionnement** | 2005-01-04 → 2005-01-10 (+6d) | 2005-02-16 → 2005-02-10 (-6d) | 32d → 24d |  |  |
| 152 | Validation des tests et de l'avancement | 2005-01-04 → 2005-01-10 (+6d) | 2005-02-16 → 2005-02-10 (-6d) | 32d → 24d |  | resources Jérôme GUERS [80%] → Jérôme GUERS [50%] |
| 153 | **Rédaction des fiches de bugs** |  | 2005-02-08 → 2005-02-04 (-4d) | 7d → 5d |  |  |
| 154 | Fonctions génériques |  | 2005-02-08 → 2005-02-04 (-4d) | 7d → 5d |  |  |
| 155 | Mode Gestion |  | 2005-02-08 → 2005-02-04 (-4d) | 7d → 5d |  |  |
| 156 | Mode Exploitation |  | 2005-02-08 → 2005-02-04 (-4d) | 7d → 5d |  |  |
| 157 | Mode Historique |  | 2005-02-08 → 2005-02-04 (-4d) | 7d → 5d |  |  |

## Version 16 (saved 2005-01-05)

Note of the change: Backup du gantt avant test

Last finish stays 2005-04-26.

Added:

| ID | Task | Duration | Start | Finish | Resources |
| --- | --- | --- | --- | --- | --- |
| 100 | **Préparation des outils de travail** | 7d | 2005-01-04 | 2005-01-12 |  |
| 101 | Finition du FlexiGuide | 6d | 2005-01-04 | 2005-01-11 | Jérôme GUERS [20%] |
| 102 | Mise en place des serveurs | 4d | 2005-01-07 | 2005-01-12 | Adrien BOUVET |
| 154 | Mise en place du suivi sur Wiki | 2d | 2005-01-04 | 2005-01-05 | Jérôme GUERS [50%] |

Removed: 109 Test flexitime.common.rmi

Changed:

| ID | Task | Start | Finish | Duration | Other |
| --- | --- | --- | --- | --- | --- |
| 26 | Signature du Cahier des Charges |  |  |  | resources Valère FOREL; Jérôme GUERS; Prâsad RAMASSAMY; Fabien APPERT; Guillaume GUERRIN; Adrien BOUVET → Adrien BOUVET; Valère FOREL; Guillaume GUERRIN; Fabien APPERT; Prâsad RAMASSAMY; Jérôme GUERS |
| 32 | Description des outils de gestions |  |  |  | resources Jérôme GUERS [30%]; Adrien BOUVET [50%] → Adrien BOUVET [50%]; Jérôme GUERS [30%] |
| 35 | Répartition des UC à réaliser |  |  |  | resources Valère FOREL; Jérôme GUERS [80%]; Prâsad RAMASSAMY; Fabien APPERT; Guillaume GUERRIN; Adrien BOUVET → Adrien BOUVET; Valère FOREL; Guillaume GUERRIN; Fabien APPERT; Prâsad RAMASSAMY; Jérôme GUERS [80%] |
| 43 | Mise au point avec consultant UML |  |  |  | resources Valère FOREL; Jérôme GUERS [80%]; Prâsad RAMASSAMY; Fabien APPERT; Guillaume GUERRIN; Adrien BOUVET → Adrien BOUVET; Valère FOREL; Guillaume GUERRIN; Fabien APPERT; Prâsad RAMASSAMY; Jérôme GUERS [80%] |
| 46 | Première relecture et mise en commun |  |  |  | resources Valère FOREL; Jérôme GUERS [50%]; Prâsad RAMASSAMY; Fabien APPERT; Guillaume GUERRIN [50%]; Adrien BOUVET [50%] → Adrien BOUVET [50%]; Valère FOREL; Guillaume GUERRIN [50%]; Fabien APPERT; Prâsad RAMASSAMY; Jérôme GUERS [50%] |
| 47 | Réalisation des FQM par UC |  |  |  | resources Valère FOREL; Prâsad RAMASSAMY; Fabien APPERT [50%] → Valère FOREL; Fabien APPERT [50%]; Prâsad RAMASSAMY |
| 50 | Zoning de l'interface |  |  |  | resources Jérôme GUERS [80%]; Prâsad RAMASSAMY; Fabien APPERT → Fabien APPERT; Prâsad RAMASSAMY; Jérôme GUERS [80%] |
| 82 | Test de communication |  |  |  | resources Valère FOREL; Adrien BOUVET → Adrien BOUVET; Valère FOREL |
| 95 | Réalisation des diagrammes de séquence |  |  |  | resources Valère FOREL; Fabien APPERT; Adrien BOUVET → Adrien BOUVET; Valère FOREL; Fabien APPERT |
| 103 | **flexitime.common** |  | 2005-01-12 → 2005-01-06 (-6d) | 7d → 3d |  |
| 110 | **flexitime.common.rmi** |  | 2005-01-12 → 2005-01-06 (-6d) | 7d → 3d |  |
| 111 | Dev flexitime.common.rmi |  | 2005-01-12 → 2005-01-06 (-6d) | 7d → 3d |  |
| 112 | **flexitime.common.event** |  | 2005-01-12 → 2005-01-06 (-6d) | 7d → 3d |  |
| 113 | Dev flexitime.common.event |  | 2005-01-12 → 2005-01-06 (-6d) | 7d → 3d |  |
| 114 | Test flexitime.common.event |  | 2005-01-05 → 2005-01-06 (+1d) | 2d → 3d |  |
| 115 | **flexitime.server** | 2005-01-04 → 2005-01-07 (+3d) |  | 25d → 22d |  |
| 125 | **flexitime.server.io** | 2005-01-04 → 2005-01-07 (+3d) |  | 25d → 22d |  |
| 132 | **flexitime.server.io.FleXML** | 2005-01-04 → 2005-01-24 (+20d) | 2005-01-11 → 2005-01-28 (+17d) | 6d → 5d |  |
| 133 | Dev flexitime.server.io.FleXML | 2005-01-04 → 2005-01-24 (+20d) | 2005-01-06 → 2005-01-25 (+19d) | 3d → 2d | resources Jérôme GUERS [80%] → Jérôme GUERS [30%] |
| 134 | Test flexitime.server.io.FleXML | 2005-01-07 → 2005-01-27 (+20d) | 2005-01-11 → 2005-01-28 (+17d) | 3d → 2d | resources Adrien BOUVET [50%] → Adrien BOUVET |
| 135 | **flexitime.server.io.FlexiPrint** | 2005-01-07 → 2005-01-17 (+10d) | 2005-01-11 → 2005-01-19 (+8d) |  |  |
| 136 | Test flexitime.server.io.FlexiPrint | 2005-01-07 → 2005-01-17 (+10d) | 2005-01-11 → 2005-01-19 (+8d) |  | resources Jérôme GUERS [40%] → none |
| 137 | **flexitime.server.io.FlexiMail** | 2005-01-07 → 2005-01-17 (+10d) | 2005-01-11 → 2005-01-19 (+8d) |  |  |
| 138 | Test flexitime.server.io.FlexiMail | 2005-01-07 → 2005-01-17 (+10d) | 2005-01-11 → 2005-01-19 (+8d) |  | resources Jérôme GUERS [40%] → none |
| 139 | **flexitime.server.io.storage** | 2005-01-11 → 2005-01-07 (-4d) | 2005-01-18 → 2005-01-20 (+2d) | 6d → 10d |  |
| 140 | Dev flexitime.server.io.storage | 2005-01-11 → 2005-01-07 (-4d) | 2005-01-18 → 2005-01-12 (-6d) | 6d → 4d |  |
| 153 | **Validation de l'avancement et du fonctionnement** | 2005-01-10 → 2005-01-04 (-6d) | 2005-02-10 → 2005-02-14 (+4d) | 24d → 30d |  |
