# FlexiTime

How a schedule from GanttProject changed from version to version. A marks actual dates.

## Version 1 (saved 2005-01-05)

Note of the change: Ajout d'un gantt spécifique au projet

| ID | WBS | Task | Duration | Start | Finish |
| --- | --- | --- | --- | --- | --- |
| 1 | 1 | **Développement** | 30d | 2005-01-04 | 2005-02-14 |
| 2 | 1.1 | **Préparation des outils de travail** | 7d | 2005-01-04 | 2005-01-12 |
| 3 |  | Finition du FlexiGuide | 6d | 2005-01-04 | 2005-01-11 |
| 4 |  | Mise en place des serveurs | 4d | 2005-01-07 | 2005-01-12 |
| 5 | 1.2 | **flexitime.common** | 3d | 2005-01-04 | 2005-01-06 |
| 6 | 1.2.1 | **flexitime.common.data** | 3d | 2005-01-04 | 2005-01-06 |
| 7 |  | Dév flexitime.common.data | 3d | 2005-01-04 | 2005-01-06 |
| 8 |  | Test flexitime.common.data | 3d | 2005-01-04 | 2005-01-06 |
| 9 | 1.2.2 | **flexitime.common.tools** | 3d | 2005-01-04 | 2005-01-06 |
| 10 |  | Dev flexitime.common.tools | 3d | 2005-01-04 | 2005-01-06 |
| 11 |  | Test flexitime.common.tools | 3d | 2005-01-04 | 2005-01-06 |
| 12 | 1.2.3 | **flexitime.common.rmi** | 3d | 2005-01-04 | 2005-01-06 |
| 13 |  | Dev flexitime.common.rmi | 3d | 2005-01-04 | 2005-01-06 |
| 14 | 1.2.4 | **flexitime.common.event** | 3d | 2005-01-04 | 2005-01-06 |
| 15 |  | Dev flexitime.common.event | 3d | 2005-01-04 | 2005-01-06 |
| 16 |  | Test flexitime.common.event | 3d | 2005-01-04 | 2005-01-06 |
| 17 | 1.3 | **flexitime.server** | 22d | 2005-01-07 | 2005-02-07 |
| 18 | 1.3.1 | **flexitime.server.core** | 10d | 2005-01-07 | 2005-01-20 |
| 19 |  | Dev flexitime.server.core | 4d | 2005-01-11 | 2005-01-14 |
| 20 |  | Test flexitime.server.core | 4d | 2005-01-11 | 2005-01-14 |
| 21 | 1.3.1.3 | **flexitime.server.core.management** | 2d | 2005-01-15 | 2005-01-18 |
| 22 |  | Dev flexitime.server.core.management | 2d | 2005-01-15 | 2005-01-18 |
| 23 |  | Test flexitime.server.core.management | 2d | 2005-01-15 | 2005-01-18 |
| 24 | 1.3.1.4 | **flexitime.server.core.admin** | 3d | 2005-01-07 | 2005-01-11 |
| 25 |  | Dev flexitime.server.core.admin | 3d | 2005-01-07 | 2005-01-11 |
| 26 |  | Test flexitime.server.core.admin | 3d | 2005-01-07 | 2005-01-11 |
| 27 | 1.3.2 | **flexitime.server.io** | 22d | 2005-01-07 | 2005-02-07 |
| 28 | 1.3.2.1 | **flexitime.server.io.FlexiLDAP** | 3d | 2005-01-10 | 2005-01-12 |
| 29 |  | Test flexitime.server.io.FlexiLDAP | 3d | 2005-01-10 | 2005-01-12 |
| 30 | 1.3.2.2 | **flexitime.server.io.FlexiFOP** | 5d | 2005-01-24 | 2005-01-28 |
| 31 |  | Dev flexitime.server.io.FlexiFOP | 2d | 2005-01-24 | 2005-01-25 |
| 32 |  | XSLT flexitime.server.io.FlexiFOP | 3d | 2005-01-26 | 2005-01-28 |
| 33 |  | Test flexitime.server.io.FlexiFOP | 2d | 2005-01-24 | 2005-01-25 |
| 34 | 1.3.2.3 | **flexitime.server.io.FleXML** | 5d | 2005-01-24 | 2005-01-28 |
| 35 |  | Dev flexitime.server.io.FleXML | 2d | 2005-01-24 | 2005-01-25 |
| 36 |  | Test flexitime.server.io.FleXML | 2d | 2005-01-27 | 2005-01-28 |
| 37 | 1.3.2.4 | **flexitime.server.io.FlexiPrint** | 3d | 2005-01-17 | 2005-01-19 |
| 38 |  | Test flexitime.server.io.FlexiPrint | 3d | 2005-01-17 | 2005-01-19 |
| 39 | 1.3.2.5 | **flexitime.server.io.FlexiMail** | 3d | 2005-01-17 | 2005-01-19 |
| 40 |  | Test flexitime.server.io.FlexiMail | 3d | 2005-01-17 | 2005-01-19 |
| 41 | 1.3.2.6 | **flexitime.server.io.storage** | 10d | 2005-01-07 | 2005-01-20 |
| 42 |  | Dev flexitime.server.io.storage | 4d | 2005-01-07 | 2005-01-12 |
| 43 |  | Test flexitime.server.io.storage | 6d | 2005-01-11 | 2005-01-18 |
| 44 | 1.4 | **flexitime.richClient** | 23d | 2005-01-04 | 2005-02-03 |
| 45 | 1.4.1 | **flexitime.richClient.models** | 5d | 2005-01-17 | 2005-01-21 |
| 46 |  | Dev flexitime.richClient.models | 5d | 2005-01-17 | 2005-01-21 |
| 47 |  | Test flexitime.richClient.models | 5d | 2005-01-17 | 2005-01-21 |
| 48 | 1.4.2 | **flexitime.richClient.gui** | 23d | 2005-01-04 | 2005-02-03 |
| 49 |  | flexitime.richClient.gui.actions | 4d | 2005-01-13 | 2005-01-18 |
| 50 | 1.4.2.2 | **flexitime.richClient.gui.panel** | 18d | 2005-01-04 | 2005-01-27 |
| 51 |  | flexitime.richClient.gui.panel.management | 5d | 2005-01-17 | 2005-01-21 |
| 52 |  | flexitime.richClient.gui.panel.exploitation | 7d | 2005-01-04 | 2005-01-12 |
| 53 |  | flexitime.richClient.gui.views | 5d | 2005-01-22 | 2005-01-28 |
| 54 |  | flexitime.ligthClient | 5d | 2005-01-17 | 2005-01-21 |
| 55 | 1.6 | **Validation de l'avancement et du fonctionnement** | 30d | 2005-01-04 | 2005-02-14 |
| 56 |  | Mise en place du suivi sur Wiki | 2d | 2005-01-04 | 2005-01-05 |
| 57 |  | Validation des tests et de l'avancement | 24d | 2005-01-10 | 2005-02-10 |
| 58 | 1.6.3 | **Rédaction des fiches de bugs** | 5d | 2005-01-29 | 2005-02-04 |
| 59 |  | Fonctions génériques | 5d | 2005-01-29 | 2005-02-04 |
| 60 |  | Mode Gestion | 5d | 2005-01-29 | 2005-02-04 |
| 61 |  | Mode Exploitation | 5d | 2005-01-29 | 2005-02-04 |
| 62 |  | Mode Historique | 5d | 2005-01-29 | 2005-02-04 |
| 63 |  | Correction et mise en forme | 13d | 2005-02-08 | 2005-02-24 |

## Version 2 (saved 2005-01-05)

Note of the change: New version phase 5

Last finish stays 2005-02-24.

Added:

| ID | Task | Duration | Start | Finish | Resources |
| --- | --- | --- | --- | --- | --- |
| 18 | flexitime.server.main | 4d | 2005-01-22 | 2005-01-27 | Fabien APPERT |
| 46 | flexitime.richClient.main | 4d | 2005-01-13 | 2005-01-18 | Prâsad RAMASSAMY |

Changed:

| ID | Task | Start | Finish | Duration | Other |
| --- | --- | --- | --- | --- | --- |
| 31 | **flexitime.server.io.FlexiFOP** | 2005-01-24 → 2005-01-22 (-2d) | 2005-01-28 → 2005-02-01 (+4d) | 5d → 7d |  |
| 32 | Dev flexitime.server.io.FlexiFOP | 2005-01-24 → 2005-01-22 (-2d) | 2005-01-25 → 2005-01-27 (+2d) | 2d → 4d |  |
| 34 | Test flexitime.server.io.FlexiFOP | 2005-01-24 → 2005-01-22 (-2d) | 2005-01-25 → 2005-01-27 (+2d) | 2d → 4d |  |
| 35 | **flexitime.server.io.FleXML** | 2005-01-24 → 2005-01-22 (-2d) | 2005-01-28 → 2005-01-27 (-1d) | 5d → 4d |  |
| 36 | Dev flexitime.server.io.FleXML | 2005-01-24 → 2005-01-22 (-2d) | 2005-01-25 → 2005-01-27 (+2d) | 2d → 4d |  |
| 37 | Test flexitime.server.io.FleXML | 2005-01-27 → 2005-01-22 (-5d) | 2005-01-28 → 2005-01-27 (-1d) | 2d → 4d |  |
| 38 | **flexitime.server.io.FlexiPrint** | 2005-01-17 → 2005-01-07 (-10d) | 2005-01-19 → 2005-01-12 (-7d) | 3d → 4d |  |
| 39 | Test flexitime.server.io.FlexiPrint | 2005-01-17 → 2005-01-07 (-10d) | 2005-01-19 → 2005-01-12 (-7d) | 3d → 4d | resources none → Valère FOREL [50%] |
| 40 | **flexitime.server.io.FlexiMail** | 2005-01-17 → 2005-01-07 (-10d) | 2005-01-19 → 2005-01-12 (-7d) | 3d → 4d |  |
| 41 | Test flexitime.server.io.FlexiMail | 2005-01-17 → 2005-01-07 (-10d) | 2005-01-19 → 2005-01-12 (-7d) | 3d → 4d | resources none → Valère FOREL [50%] |
| 43 | Dev flexitime.server.io.storage |  | 2005-01-12 → 2005-01-14 (+2d) | 4d → 6d |  |
| 45 | **flexitime.richClient** |  | 2005-02-03 → 2005-01-27 (-7d) | 23d → 18d |  |
| 50 | **flexitime.richClient.gui** |  | 2005-02-03 → 2005-01-27 (-7d) | 23d → 18d |  |
| 55 | flexitime.richClient.gui.views | 2005-01-22 → 2005-01-17 (-5d) | 2005-01-28 → 2005-01-21 (-7d) |  |  |

## Version 3 (saved 2005-01-06)

Note of the change: MaJ gantt

Last finish stays 2005-02-24. Complete tasks 0 → 1.

Changed:

| ID | Task | Start | Finish | Duration | Complete | Other |
| --- | --- | --- | --- | --- | --- | --- |
| 1 | **Développement** |  |  |  | 0% → 1% |  |
| 2 | **Préparation des outils de travail** |  | 2005-01-12 → 2005-01-18 (+6d) | 7d → 11d |  |  |
| 4 | Mise en place des serveurs | 2005-01-07 → 2005-01-11 (+4d) | 2005-01-12 → 2005-01-14 (+2d) |  |  |  |
| 5 | **flexitime.common** |  |  |  | 0% → 12% |  |
| 14 | **flexitime.common.event** |  |  |  | 0% → 44% |  |
| 15 | Dev flexitime.common.event |  |  |  | 0% → 90% |  |
| 21 | Test flexitime.server.core | 2005-01-11 → 2005-01-07 (-4d) | 2005-01-14 → 2005-01-12 (-2d) |  |  |  |
| 57 | **Validation de l'avancement et du fonctionnement** |  |  |  | 0% → 3% |  |
| 58 | Mise en place du suivi sur Wiki |  |  |  | 0% → 100% |  |
| 63 | Mode Exploitation |  |  |  |  | resources Valère FOREL; Fabien APPERT → Fabien APPERT; Valère FOREL |

## Version 4 (saved 2005-01-07)

Note of the change: MaJ gantt

Last finish stays 2005-02-24.

Changed:

| ID | Task | Start | Finish | Duration | Complete | Other |
| --- | --- | --- | --- | --- | --- | --- |
| 2 | **Préparation des outils de travail** |  | 2005-01-18 → 2005-01-14 (-4d) | 11d → 9d |  |  |
| 4 | Mise en place des serveurs | 2005-01-11 → 2005-01-10 (-1d) | 2005-01-14 → 2005-01-12 (-2d) | 4d → 3d |  |  |
| 5 | **flexitime.common** |  | 2005-01-06 → 2005-01-11 (+5d) | 3d → 6d | 12% → 10% |  |
| 6 | **flexitime.common.data** |  | 2005-01-06 → 2005-01-11 (+5d) | 3d → 6d |  |  |
| 7 | Dév flexitime.common.data |  | 2005-01-06 → 2005-01-11 (+5d) | 3d → 6d |  |  |
| 19 | **flexitime.server.core** |  | 2005-01-20 → 2005-01-24 (+4d) | 10d → 12d |  |  |
| 21 | Test flexitime.server.core | 2005-01-07 → 2005-01-13 (+6d) | 2005-01-12 → 2005-01-18 (+6d) |  |  |  |
| 22 | **flexitime.server.core.management** |  | 2005-01-18 → 2005-01-20 (+2d) | 2d → 4d |  |  |
| 24 | Test flexitime.server.core.management | 2005-01-15 → 2005-01-17 (+2d) |  |  |  |  |
| 37 | Test flexitime.server.io.FleXML | 2005-01-22 → 2005-01-24 (+2d) | 2005-01-27 → 2005-01-25 (-2d) | 4d → 2d |  |  |
| 45 | **flexitime.richClient** |  | 2005-01-27 → 2005-01-31 (+4d) | 18d → 20d |  |  |
| 50 | **flexitime.richClient.gui** |  | 2005-01-27 → 2005-01-31 (+4d) | 18d → 20d |  |  |
| 55 | flexitime.richClient.gui.views | 2005-01-17 → 2005-01-19 (+2d) | 2005-01-21 → 2005-01-25 (+4d) |  |  |  |
| 63 | Mode Exploitation |  |  |  |  | resources Fabien APPERT; Valère FOREL → Valère FOREL; Fabien APPERT |

## Version 5 (saved 2005-01-12)

Note of the change: MaJ Planning Gantt

Last finish stays 2005-02-24.

Changed:

| ID | Task | Start | Finish | Duration | Complete | Other |
| --- | --- | --- | --- | --- | --- | --- |
| 1 | **Développement** |  |  |  | 1% → 12% |  |
| 2 | **Préparation des outils de travail** |  |  |  | 0% → 6% |  |
| 3 | Finition du FlexiGuide |  |  |  | 0% → 10% |  |
| 5 | **flexitime.common** |  |  |  | 10% → 66% |  |
| 6 | **flexitime.common.data** |  |  |  | 0% → 89% |  |
| 7 | Dév flexitime.common.data |  |  |  | 0% → 90% |  |
| 8 | Test flexitime.common.data |  |  |  | 0% → 90% |  |
| 9 | **flexitime.common.tools** |  |  |  | 0% → 92% |  |
| 10 | Dev flexitime.common.tools |  |  |  | 0% → 95% |  |
| 11 | Test flexitime.common.tools |  |  |  | 0% → 90% |  |
| 25 | **flexitime.server.core.admin** |  | 2005-01-11 → 2005-01-14 (+3d) | 3d → 6d |  |  |
| 26 | Dev flexitime.server.core.admin |  | 2005-01-11 → 2005-01-14 (+3d) | 3d → 6d |  | resources Guillaume GUERRIN [50%] → Guillaume GUERRIN [25%] |
| 27 | Test flexitime.server.core.admin |  | 2005-01-11 → 2005-01-14 (+3d) | 3d → 6d |  | resources Guillaume GUERRIN [50%] → Guillaume GUERRIN [25%] |
| 43 | Dev flexitime.server.io.storage |  | 2005-01-14 → 2005-01-20 (+6d) | 6d → 10d |  |  |
| 45 | **flexitime.richClient** |  | 2005-01-31 → 2005-02-02 (+2d) | 20d → 22d | 0% → 16% |  |
| 46 | flexitime.richClient.main | 2005-01-13 → 2005-01-22 (+9d) | 2005-01-18 → 2005-01-27 (+9d) |  |  |  |
| 50 | **flexitime.richClient.gui** |  |  |  | 0% → 22% |  |
| 52 | **flexitime.richClient.gui.panel** |  |  |  | 0% → 29% |  |
| 54 | flexitime.richClient.gui.panel.exploitation |  |  |  | 0% → 50% |  |
| 63 | Mode Exploitation |  |  |  |  | resources Valère FOREL; Fabien APPERT → Fabien APPERT; Valère FOREL |

## Version 6 (saved 2005-01-25)

Note of the change: MaJ Gantt

Last finish stays 2005-02-24. Complete tasks 1 → 11.

Added:

| ID | Task | Duration | Start | Finish | Resources |
| --- | --- | --- | --- | --- | --- |
| 21 | Dev flexitime.server.core V2 | 5d | 2005-01-17 | 2005-01-21 | Prâsad RAMASSAMY |

Removed: 59 Validation des tests et de l'avancement

Changed:

| ID | Task | Start | Finish | Duration | Complete | Other |
| --- | --- | --- | --- | --- | --- | --- |
| 1 | **Développement** |  |  |  | 12% → 44% |  |
| 2 | **Préparation des outils de travail** |  |  |  | 6% → 100% |  |
| 3 | Finition du FlexiGuide |  |  |  | 10% → 100% |  |
| 4 | Mise en place des serveurs |  |  |  | 0% → 100% |  |
| 5 | **flexitime.common** |  |  |  | 66% → 75% |  |
| 6 | **flexitime.common.data** |  |  |  | 89% → 83% |  |
| 7 | Dév flexitime.common.data |  |  |  | 90% → 100% |  |
| 8 | Test flexitime.common.data |  |  |  | 90% → 50% |  |
| 9 | **flexitime.common.tools** |  |  |  | 92% → 75% |  |
| 10 | Dev flexitime.common.tools |  |  |  | 95% → 100% |  |
| 11 | Test flexitime.common.tools |  |  |  | 90% → 50% |  |
| 12 | **flexitime.common.rmi** |  |  |  | 0% → 100% |  |
| 13 | Dev flexitime.common.rmi |  |  |  | 0% → 100% |  |
| 17 | **flexitime.server** |  | 2005-02-07 → 2005-02-11 (+4d) | 22d → 26d | 0% → 35% |  |
| 18 | flexitime.server.main | 2005-01-22 → 2005-01-26 (+4d) | 2005-01-27 → 2005-01-31 (+4d) |  |  | resources Fabien APPERT → none |
| 19 | **flexitime.server.core** |  | 2005-01-24 → 2005-02-11 (+18d) | 12d → 26d | 0% → 17% |  |
| 20 | Dev flexitime.server.core |  |  |  | 0% → 100% |  |
| 22 | Test flexitime.server.core | 2005-01-13 → 2005-01-29 (+16d) | 2005-01-18 → 2005-02-03 (+16d) |  |  | resources Adrien BOUVET → none |
| 23 | **flexitime.server.core.management** |  | 2005-01-20 → 2005-02-07 (+18d) | 4d → 16d |  |  |
| 25 | Test flexitime.server.core.management | 2005-01-17 → 2005-01-29 (+12d) | 2005-01-18 → 2005-02-01 (+14d) |  |  | resources Adrien BOUVET → none |
| 29 | **flexitime.server.io** |  | 2005-02-07 → 2005-02-11 (+4d) | 22d → 26d | 0% → 51% |  |
| 30 | **flexitime.server.io.FlexiLDAP** |  |  |  | 0% → 89% |  |
| 31 | Test flexitime.server.io.FlexiLDAP |  |  |  | 0% → 90% |  |
| 32 | **flexitime.server.io.FlexiFOP** | 2005-01-22 → 2005-01-29 (+7d) | 2005-02-01 → 2005-02-03 (+2d) | 7d → 4d |  |  |
| 33 | Dev flexitime.server.io.FlexiFOP | 2005-01-22 → 2005-01-29 (+7d) | 2005-01-27 → 2005-02-03 (+7d) |  |  | resources Guillaume GUERRIN → none |
| 34 | XSLT flexitime.server.io.FlexiFOP | 2005-01-26 → 2005-01-29 (+3d) | 2005-01-28 → 2005-02-02 (+5d) |  |  | resources Jérôme GUERS [30%] → none |
| 35 | Test flexitime.server.io.FlexiFOP | 2005-01-22 → 2005-01-29 (+7d) | 2005-01-27 → 2005-02-03 (+7d) |  |  | resources Valère FOREL [50%] → none |
| 36 | **flexitime.server.io.FleXML** | 2005-01-22 → 2005-01-29 (+7d) | 2005-01-27 → 2005-02-03 (+7d) |  |  |  |
| 37 | Dev flexitime.server.io.FleXML | 2005-01-22 → 2005-01-29 (+7d) | 2005-01-27 → 2005-02-03 (+7d) |  |  | resources Jérôme GUERS [30%] → none |
| 38 | Test flexitime.server.io.FleXML | 2005-01-24 → 2005-01-29 (+5d) | 2005-01-25 → 2005-02-01 (+7d) |  |  | resources Adrien BOUVET → none |
| 39 | **flexitime.server.io.FlexiPrint** |  |  |  | 0% → 100% |  |
| 40 | Test flexitime.server.io.FlexiPrint |  |  |  | 0% → 100% |  |
| 41 | **flexitime.server.io.FlexiMail** |  |  |  | 0% → 100% |  |
| 42 | Test flexitime.server.io.FlexiMail |  |  |  | 0% → 100% |  |
| 43 | **flexitime.server.io.storage** |  |  |  | 0% → 62% |  |
| 44 | Dev flexitime.server.io.storage |  |  |  | 0% → 100% | resources Prâsad RAMASSAMY → Prâsad RAMASSAMY [50%] |
| 45 | Test flexitime.server.io.storage |  |  |  |  | resources Fabien APPERT → Prâsad RAMASSAMY [50%] |
| 46 | **flexitime.richClient** |  | 2005-02-02 → 2005-02-09 (+7d) | 22d → 27d | 16% → 55% |  |
| 47 | flexitime.richClient.main | 2005-01-22 → 2005-01-17 (-5d) | 2005-01-27 → 2005-01-25 (-2d) | 4d → 7d | 0% → 50% | resources Prâsad RAMASSAMY → Adrien BOUVET |
| 48 | **flexitime.richClient.models** |  | 2005-01-21 → 2005-02-03 (+13d) | 5d → 14d | 0% → 32% |  |
| 49 | Dev flexitime.richClient.models |  | 2005-01-21 → 2005-01-27 (+6d) | 5d → 9d | 0% → 50% | resources Fabien APPERT → Guillaume GUERRIN [50%]; Fabien APPERT |
| 50 | Test flexitime.richClient.models | 2005-01-17 → 2005-01-26 (+9d) | 2005-01-21 → 2005-02-01 (+11d) |  |  | resources Prâsad RAMASSAMY → none |
| 51 | **flexitime.richClient.gui** |  | 2005-01-31 → 2005-02-07 (+7d) | 20d → 25d | 22% → 63% |  |
| 52 | flexitime.richClient.gui.actions |  |  |  | 0% → 50% |  |
| 53 | **flexitime.richClient.gui.panel** |  | 2005-01-27 → 2005-02-02 (+6d) | 18d → 22d | 29% → 70% |  |
| 54 | flexitime.richClient.gui.panel.management |  | 2005-01-21 → 2005-01-27 (+6d) | 5d → 9d | 0% → 70% | resources Guillaume GUERRIN → Guillaume GUERRIN [50%] |
| 55 | flexitime.richClient.gui.panel.exploitation |  | 2005-01-12 → 2005-02-02 (+21d) | 7d → 22d | 50% → 70% |  |
| 56 | flexitime.richClient.gui.views | 2005-01-19 → 2005-01-24 (+5d) | 2005-01-25 → 2005-01-28 (+3d) |  |  |  |
| 57 | flexitime.ligthClient |  | 2005-01-21 → 2005-01-27 (+6d) | 5d → 9d | 0% → 50% |  |
| 58 | **Validation de l'avancement et du fonctionnement** |  |  |  | 3% → 7% |  |
| 63 | Mode Exploitation |  |  |  |  | resources Fabien APPERT; Valère FOREL → Valère FOREL; Fabien APPERT |
